# Planificación

How a schedule from MS Project changed from version to version. A marks actual dates.

## Version 1 (saved 2014-05-27)

Note of the change: Reestructuración del Repo

| ID | WBS | Task | Duration | Start | Finish | Predecessors | Complete | Total float | Constraint |
| --- | --- | --- | --- | --- | --- | --- | --- | --- | --- |
| 1 | 1 | **Sprint 0** | 78d | 2014-03-18 A | 2014-06-03 |  | 75% | 3d |  |
| 2 | 1.1 | **Realizar Propuesta Inicial** | 22d | 2014-03-18 A | 2014-04-08 |  | 99% | 0d |  |
| 3 |  | Analizar la problematica y su contexto | 7d | 2014-03-18 A | 2014-03-26 A |  | 100% |  | start no earlier than 2014-03-31 |
| 4 |  | Analizar viabilidad del proyecto | 7d | 2014-03-18 A | 2014-03-26 A |  | 100% |  | start no earlier than 2014-03-31 |
| 5 |  | Definir propuesta de solucion | 7d | 2014-03-18 A | 2014-03-26 A |  | 100% |  | start no earlier than 2014-03-31 |
| 6 |  | Preparar presentación | 4d | 2014-03-31 A | 2014-04-03 A | 3, 4, 5 | 100% |  |  |
| 7 |  | Exponer | 1d | 2014-04-08 A | 2014-04-08 A |  | 100% |  |  |
| 8 | 1.2 | **Realizar Calendarización** | 17d | 2014-04-15 A | 2014-05-07 A |  | 100% |  |  |
| 9 |  | Armar WBS | 7d | 2014-04-15 A | 2014-04-23 A |  | 100% |  |  |
| 10 |  | Correccion WBS | 2d | 2014-04-24 A | 2014-04-25 A | 9 | 100% |  |  |
| 11 |  | Armar calendario | 7d | 2014-04-28 A | 2014-05-06 A | 10 | 100% |  |  |
| 12 | 1.3 | **Realizar Estudio Inicial** | 32d | 2014-04-08 A | 2014-05-09 | 2 | 99% | 0d |  |
| 13 |  | Analizar la problematica y su contexto | 14d | 2014-04-09 A | 2014-04-28 A |  | 100% |  |  |
| 14 |  | Analizar soluciones existentes en el mercado | 2d | 2014-04-09 A | 2014-04-10 A |  | 100% |  |  |
| 15 |  | Definir alcances | 7d | 2014-04-09 A | 2014-04-17 A |  | 100% |  |  |
| 16 |  | Realizar analisis de Factibilidad | 1d | 2014-04-08 A | 2014-04-09 A |  | 100% |  |  |
| 17 |  | Realizar Encuestas | 10d | 2014-04-28 A | 2014-05-09 A |  | 100% |  | finish no earlier than 2014-05-09 |
| 18 |  | Estudiar dominio | 7d | 2014-04-08 A | 2014-04-16 A |  | 100% |  |  |
| 19 |  | Realizar plan de configuración | 7d | 2014-05-07 | 2014-05-13 |  |  |  |  |
| 20 | 1.5 | **Realizar Plan de Riesgos** | 8d | 2014-05-13 A | 2014-05-20 A |  | 100% |  |  |
| 21 |  | Identificar, clasificar y priorizar riesgos | 3d | 2014-05-13 A | 2014-05-15 A |  | 100% |  |  |
| 22 |  | Realizar plan mitigación | 2d | 2014-05-16 A | 2014-05-19 A | 21 | 100% |  |  |
| 23 |  | Realizar plan de contingencia | 2d | 2014-05-16 A | 2014-05-19 A | 21 | 100% |  |  |
| 24 | 1.6 | **Realizar Plan de Métricas** | 7d | 2014-05-20 A | 2014-05-26 |  | 80% | 0d |  |
| 25 |  | Identificar metricas | 7d | 2014-05-20 A | 2014-05-26 |  | 80% |  |  |
| 26 |  | Definir responsables y método de medicion | 7d | 2014-05-20 A | 2014-05-26 |  | 80% |  |  |
| 27 | 1.7 | **Realizar Plan de Testing** | 9d | 2014-05-20 A | 2014-05-28 A |  | 100% |  |  |
| 28 |  | Definir tipos de pruebas | 7d | 2014-05-20 A | 2014-05-28 A |  | 100% |  |  |
| 29 |  | Definir estrategia de prueba | 7d | 2014-05-20 A | 2014-05-28 A |  | 100% |  |  |
| 30 |  | Definir nivel de cobertura | 7d | 2014-05-20 A | 2014-05-28 A |  | 100% |  |  |
| 31 |  | Correcciones | 1d | 2014-05-24 A | 2014-05-24 A |  | 100% |  |  |
| 32 |  | Analizar Impacto Ambiental | 7d | 2014-05-20 | 2014-05-26 |  |  |  |  |
| 33 | 1.9 | **Realizar Presentación de Estudio Inicial** | 7d | 2014-05-19 A | 2014-05-25 | 12 | 100% |  |  |
| 34 |  | Preparar presentación | 3d | 2014-05-19 A | 2014-05-21 A |  | 100% |  |  |
| 35 |  | Elaborar presentación | 3d | 2014-05-22 A | 2014-05-24 A | 34 | 100% |  |  |
| 36 |  | Exponer | 1d | 2014-05-27 A | 2014-05-27 A |  | 100% |  | start no earlier than 2014-05-27 |
| 37 | 1.10 | **Preparar Product Backlog** | 6d | 2014-05-29 | 2014-06-03 | 33, 32, 27, 24 |  |  |  |
| 38 |  | Identificar historias de usuario | 4d | 2014-05-29 | 2014-06-01 |  |  | 2d |  |
| 39 |  | Priorizar historias de usuario | 4d | 2014-05-29 | 2014-06-01 |  |  | 2d |  |
| 40 |  | Estimar historias de usuario | 4d | 2014-05-29 | 2014-06-01 |  |  | 2d |  |
| 41 | 1.11 | **Realizar ERS** | 3d | 2014-05-29 | 2014-05-31 | 33, 32, 27, 24 |  | 5d |  |
| 42 |  | Entrevistar expertos en dominio | 3d | 2014-05-29 | 2014-05-31 |  |  | 5d |  |
| 43 |  | Identificar funcionalidades | 3d | 2014-05-29 | 2014-05-31 |  |  | 5d |  |
| 44 |  | Especificar funcionalidades | 3d | 2014-05-29 | 2014-05-31 |  |  | 5d |  |
| 45 |  | Definir reglas de negocio | 3d | 2014-05-29 | 2014-05-31 |  |  | 5d |  |
| 46 | 1.12 | **Definir Metodología y Herramientas de Trabajo** | 1d | 2014-06-01 | 2014-06-01 | 41 |  | 5d |  |
| 47 |  | Definir y preparar entorno de trabajo | 1d | 2014-06-01 | 2014-06-01 |  |  | 5d |  |
| 48 |  | Definir ciclo de vida del sw | 1d | 2014-06-01 | 2014-06-01 |  |  | 5d |  |
| 49 | 2 | **Sprint 1** | 22d | 2014-06-07 | 2014-06-28 | 1 |  |  |  |
| 50 |  | Realizar Sprint Planning | 1d? | 2014-06-07 | 2014-06-07 |  |  |  |  |
| 51 |  | Investigar tecnologías de desarrollo | 1d? | 2014-06-07 | 2014-06-07 |  |  |  |  |
| 52 |  | Investigar Algoritmos de Generación de fixture | 1d? | 2014-06-07 | 2014-06-07 |  |  |  |  |
| 53 |  | Analizar y Especificar los requerimientos | 1d? | 2014-06-07 | 2014-06-07 |  |  |  |  |
| 54 | 2.5 | **Diseñar Solución** | 1d? | 2014-06-07 | 2014-06-07 |  |  |  |  |
| 55 |  | Actualizar modelos existentes | 1d? | 2014-06-07 | 2014-06-07 |  |  |  |  |
| 56 |  | Crear nuevos modelos | 1d | 2014-06-07 | 2014-06-07 |  |  |  |  |
| 57 |  | Desarrollar | 1d | 2014-06-07 | 2014-06-07 |  |  |  |  |
| 58 |  | Testear | 1d? | 2014-06-07 | 2014-06-07 |  |  |  |  |
| 59 |  | Implementar | 1d? | 2014-06-07 | 2014-06-07 |  |  |  |  |
| 60 |  | Gestionar cambios | 1d? | 2014-06-07 | 2014-06-07 |  |  |  |  |
| 61 |  | Realizar seguimiento y control de riesgos | 1d? | 2014-06-07 | 2014-06-07 |  |  |  |  |
| 62 |  | Realizar Sprint Review | 1d? | 2014-06-07 | 2014-06-07 |  |  |  |  |
| 63 |  | Realizar reunión retrospectiva | 1d | 2014-06-28 | 2014-06-28 |  |  | -1d | start no earlier than 2014-06-28 |
| 64 | 4 | **Sprint 2** | 22d | 2014-06-28 | 2014-07-19 | 63 |  |  |  |
| 65 |  | Realizar Sprint Planning | 1d? | 2014-06-28 | 2014-06-28 |  |  |  |  |
| 66 |  | Analizar y Especificar los requerimientos | 1d? | 2014-06-28 | 2014-06-28 |  |  |  |  |
| 67 | 4.3 | **Diseñar Solución** | 1d? | 2014-06-28 | 2014-06-28 |  |  |  |  |
| 68 |  | Actualizar modelos existentes | 1d | 2014-06-28 | 2014-06-28 |  |  |  |  |
| 69 |  | Crear nuevos modelos | 1d | 2014-06-28 | 2014-06-28 |  |  |  |  |
| 70 |  | Desarrollar | 1d | 2014-06-28 | 2014-06-28 |  |  |  |  |

| ID | WBS | Task | Duration | Start | Finish | Predecessors | Total float | Constraint |
| --- | --- | --- | --- | --- | --- | --- | --- | --- |
| 71 |  | Testear | 1d | 2014-06-28 | 2014-06-28 |  |  |  |
| 72 |  | Implementar | 1d | 2014-06-28 | 2014-06-28 |  |  |  |
| 73 |  | Gestionar cambios | 1d | 2014-06-28 | 2014-06-28 |  |  |  |
| 74 |  | Realizar seguimiento y control de riesgos | 1d | 2014-06-28 | 2014-06-28 |  |  |  |
| 75 |  | Realizar Sprint Review | 1d | 2014-06-28 | 2014-06-28 |  |  |  |
| 76 |  | Realizar reunión retrospectiva | 1d | 2014-07-19 | 2014-07-19 |  | -1d | start no earlier than 2014-07-19 |
| 77 | 6 | **Sprint 3** | 22d | 2014-07-19 | 2014-08-09 | 76 |  |  |
| 78 |  | Realizar Sprint Planning | 1d | 2014-07-19 | 2014-07-19 |  |  |  |
| 79 |  | Analizar y Especificar los requerimientos | 1d | 2014-07-19 | 2014-07-19 |  |  |  |
| 80 | 6.3 | **Diseñar Solución** | 1d? | 2014-07-19 | 2014-07-19 |  |  |  |
| 81 |  | Actualizar modelos existentes | 1d | 2014-07-19 | 2014-07-19 |  |  |  |
| 82 |  | Crear nuevos modelos | 1d | 2014-07-19 | 2014-07-19 |  |  |  |
| 83 |  | Desarrollar | 1d | 2014-07-19 | 2014-07-19 |  |  |  |
| 84 |  | Testear | 1d | 2014-07-19 | 2014-07-19 |  |  |  |
| 85 |  | Implementar | 1d | 2014-07-19 | 2014-07-19 |  |  |  |
| 86 |  | Gestionar cambios | 1d | 2014-07-19 | 2014-07-19 |  |  |  |
| 87 |  | Realizar seguimiento y control de riesgos | 1d | 2014-07-19 | 2014-07-19 |  |  |  |
| 88 |  | Realizar Sprint Review | 1d | 2014-07-19 | 2014-07-19 |  |  |  |
| 89 |  | Realizar reunión retrospectiva | 1d | 2014-08-09 | 2014-08-09 |  | 0d | start no earlier than 2014-08-09 |
| 90 | 8 | **Sprint 4** | 21d | 2014-08-09 | 2014-08-30 | 89 |  |  |
| 91 |  | Realizar Sprint Planning | 1d | 2014-08-09 | 2014-08-10 |  |  |  |
| 92 |  | Analizar y Especificar los requerimientos | 1d | 2014-08-09 | 2014-08-10 |  |  |  |
| 93 | 8.3 | **Diseñar Solución** | 3d? | 2014-08-09 | 2014-08-12 |  |  |  |
| 94 |  | Actualizar modelos existentes | 1d | 2014-08-09 | 2014-08-10 |  |  |  |
| 95 |  | Crear nuevos modelos | 1d | 2014-08-09 | 2014-08-10 |  |  |  |
| 96 |  | Desarrollar | 1d | 2014-08-09 | 2014-08-10 |  |  |  |
| 97 |  | Testear | 1d | 2014-08-09 | 2014-08-10 |  |  |  |
| 98 |  | Implementar | 1d | 2014-08-09 | 2014-08-10 |  |  |  |
| 99 |  | Gestionar cambios | 1d | 2014-08-09 | 2014-08-10 |  |  |  |
| 100 |  | Realizar seguimiento y control de riesgos | 1d | 2014-08-09 | 2014-08-10 |  |  |  |
| 101 |  | Realizar Sprint Review | 1d | 2014-08-09 | 2014-08-10 |  |  |  |
| 102 |  | Realizar reunión retrospectiva | 1d | 2014-10-25 | 2014-10-25 |  | -57d | start no earlier than 2014-10-25 |
| 103 | 10 | **Sprint 5** | 22d | 2014-08-30 | 2014-09-20 | 102 |  |  |
| 104 |  | Realizar Sprint Planning | 1d | 2014-08-30 | 2014-08-30 |  |  |  |
| 105 |  | Analizar y Especificar los requerimientos | 1d | 2014-08-30 | 2014-08-30 |  |  |  |
| 106 | 10.3 | **Diseñar Solución** | 2d? | 2014-08-30 | 2014-08-31 |  |  |  |
| 107 |  | Actualizar modelos existentes | 1d | 2014-08-30 | 2014-08-30 |  |  |  |
| 108 |  | Crear nuevos modelos | 1d | 2014-08-30 | 2014-08-30 |  |  |  |
| 109 |  | Desarrollar | 1d | 2014-08-30 | 2014-08-30 |  |  |  |
| 110 |  | Testear | 1d | 2014-08-30 | 2014-08-30 |  |  |  |
| 111 |  | Implementar | 1d | 2014-08-30 | 2014-08-30 |  |  |  |
| 112 |  | Gestionar cambios | 1d | 2014-08-30 | 2014-08-30 |  |  |  |
| 113 |  | Realizar seguimiento y control de riesgos | 1d | 2014-08-30 | 2014-08-30 |  |  |  |
| 114 |  | Realizar Sprint Review | 1d | 2014-08-30 | 2014-08-30 |  |  |  |
| 115 |  | Realizar reunión retrospectiva | 1d | 2014-11-29 | 2014-11-29 |  | -71d | start no earlier than 2014-11-29 |
| 116 | 12 | **Sprint 6** | 22d | 2014-09-20 | 2014-10-11 | 115 |  |  |
| 117 |  | Realizar Sprint Planning | 1d | 2014-09-20 | 2014-09-20 |  |  |  |
| 118 |  | Analizar y Especificar los requerimientos | 1d | 2014-09-20 | 2014-09-20 |  |  |  |
| 119 | 12.3 | **Diseñar Solución** | 2d? | 2014-09-20 | 2014-09-21 |  |  |  |
| 120 |  | Actualizar modelos existentes | 1d | 2014-09-20 | 2014-09-20 |  |  |  |
| 121 |  | Crear nuevos modelos | 1d | 2014-09-20 | 2014-09-20 |  |  |  |
| 122 |  | Desarrollar | 1d | 2014-09-20 | 2014-09-20 |  |  |  |
| 123 |  | Testear | 1d | 2014-09-20 | 2014-09-20 |  |  |  |
| 124 |  | Implementar | 1d | 2014-09-20 | 2014-09-20 |  |  |  |
| 125 |  | Gestionar cambios | 1d | 2014-09-20 | 2014-09-20 |  |  |  |
| 126 |  | Realizar seguimiento y control de riesgos | 1d | 2014-09-20 | 2014-09-20 |  |  |  |
| 127 |  | Realizar Sprint Review | 1d | 2014-09-20 | 2014-09-20 |  |  |  |
| 128 |  | Realizar reunión retrospectiva | 1d | 2015-01-03 | 2015-01-03 |  | -85d | start no earlier than 2015-01-03 |
| 129 | 14 | **Sprint 7** | 22d | 2014-10-11 | 2014-11-01 | 128 |  |  |
| 130 |  | Realizar Sprint Planning | 1d | 2014-10-11 | 2014-10-11 |  |  |  |
| 131 |  | Analizar y Especificar los requerimientos | 1d | 2014-10-11 | 2014-10-11 |  |  |  |
| 132 | 14.3 | **Diseñar Solución** | 2d? | 2014-10-11 | 2014-10-12 |  |  |  |
| 133 |  | Actualizar modelos existentes | 1d | 2014-10-11 | 2014-10-11 |  |  |  |
| 134 |  | Crear nuevos modelos | 1d | 2014-10-11 | 2014-10-11 |  |  |  |
| 135 |  | Desarrollar | 1d | 2014-10-11 | 2014-10-11 |  |  |  |
| 136 |  | Testear | 1d | 2014-10-11 | 2014-10-11 |  |  |  |
| 137 |  | Implementar | 1d | 2014-10-11 | 2014-10-11 |  |  |  |
| 138 |  | Gestionar cambios | 1d | 2014-10-11 | 2014-10-11 |  |  |  |
| 139 |  | Realizar seguimiento y control de riesgos | 1d | 2014-10-11 | 2014-10-11 |  |  |  |
| 140 |  | Realizar Sprint Review | 1d | 2014-10-11 | 2014-10-11 |  |  |  |

| ID | WBS | Task | Duration | Start | Finish | Predecessors | Total float | Constraint |
| --- | --- | --- | --- | --- | --- | --- | --- | --- |
| 141 |  | Realizar reunión retrospectiva | 1d | 2015-01-10 | 2015-01-10 |  | -71d | start no earlier than 2015-01-10 |
| 142 | 16 | **Sprint 8** | 22d | 2014-11-01 | 2014-11-22 | 141 |  |  |
| 143 |  | Realizar Sprint Planning | 1d | 2014-11-01 | 2014-11-01 |  |  |  |
| 144 |  | Analizar y Especificar los requerimientos | 1d | 2014-11-01 | 2014-11-01 |  |  |  |
| 145 | 16.3 | **Diseñar Solución** | 1d? | 2014-11-01 | 2014-11-01 |  |  |  |
| 146 |  | Actualizar modelos existentes | 1d | 2014-11-01 | 2014-11-01 |  |  |  |
| 147 |  | Crear nuevos modelos | 1d | 2014-11-01 | 2014-11-01 |  |  |  |
| 148 |  | Desarrollar | 1d | 2014-11-01 | 2014-11-01 |  |  |  |
| 149 |  | Testear | 1d | 2014-11-01 | 2014-11-01 |  |  |  |
| 150 |  | Implementar | 1d | 2014-11-01 | 2014-11-01 |  |  |  |
| 151 |  | Gestionar cambios | 1d | 2014-11-01 | 2014-11-01 |  |  |  |
| 152 |  | Realizar seguimiento y control de riesgos | 1d | 2014-11-01 | 2014-11-01 |  |  |  |
| 153 |  | Realizar Sprint Review | 1d | 2014-11-01 | 2014-11-01 |  |  |  |
| 154 |  | Realizar reunión retrospectiva | 1d | 2015-03-11 | 2015-03-11 | 142 | -110d | start no earlier than 2015-03-11 |
| 155 | 18 | **Sprint 9** | 22d | 2014-11-22 | 2014-12-13 | 154 |  |  |
| 156 |  | Realizar Sprint Planning | 1d | 2014-11-22 | 2014-11-22 |  |  |  |
| 157 |  | Analizar y Especificar los requerimientos | 1d | 2014-11-22 | 2014-11-22 |  |  |  |
| 158 | 18.3 | **Diseñar Solución** | 1d? | 2014-11-22 | 2014-11-22 |  |  |  |
| 159 |  | Actualizar modelos existentes | 1d | 2014-11-22 | 2014-11-22 |  |  |  |
| 160 |  | Crear nuevos modelos | 1d | 2014-11-22 | 2014-11-22 |  |  |  |
| 161 |  | Desarrollar | 1d | 2014-11-22 | 2014-11-22 |  |  |  |
| 162 |  | Testear | 1d | 2014-11-22 | 2014-11-22 |  |  |  |
| 163 |  | Implementar | 1d | 2014-11-22 | 2014-11-22 |  |  |  |
| 164 |  | Gestionar cambios | 1d | 2014-11-22 | 2014-11-22 |  |  |  |
| 165 |  | Realizar seguimiento y control de riesgos | 1d | 2014-11-22 | 2014-11-22 |  |  |  |
| 166 |  | Realizar Sprint Review | 1d | 2014-11-22 | 2014-11-22 |  |  |  |
| 167 |  | Realizar reunión retrospectiva | 1d | 2014-05-03 | 2014-05-03 |  | 223d |  |
| 168 | 20 | **Sprint 10** | 22d | 2014-12-13 | 2015-01-03 | 167 |  |  |
| 169 |  | Realizar Sprint Planning | 1d | 2014-12-13 | 2014-12-13 |  |  |  |
| 170 |  | Analizar y Especificar los requerimientos | 1d | 2014-12-13 | 2014-12-13 |  |  |  |
| 171 | 20.3 | **Diseñar Solución** | 1d | 2014-12-13 | 2014-12-13 |  | 0d |  |
| 172 |  | Actualizar modelos existentes | 1d | 2014-12-13 | 2014-12-13 |  |  |  |
| 173 |  | Crear nuevos modelos | 1d | 2014-12-13 | 2014-12-13 |  |  |  |
| 174 |  | Desarrollar | 1d | 2014-12-13 | 2014-12-13 |  |  |  |
| 175 |  | Testear | 1d | 2014-12-13 | 2014-12-13 |  |  |  |
| 176 |  | Implementar | 1d | 2014-12-13 | 2014-12-13 |  |  |  |
| 177 |  | Gestionar cambios | 1d | 2014-12-13 | 2014-12-13 |  |  |  |
| 178 |  | Realizar seguimiento y control de riesgos | 1d | 2014-12-13 | 2014-12-13 |  |  |  |
| 179 |  | Realizar Sprint Review | 1d | 2014-12-13 | 2014-12-13 |  |  |  |
| 180 |  | Realizar reunión retrospectiva | 1d | 2015-01-03 | 2015-01-03 |  | -1d | start no earlier than 2015-01-03 |
| 181 | 22 | **Sprint 10** | 22d | 2015-01-03 | 2015-01-24 | 180 |  |  |
| 182 |  | Realizar Sprint Planning | 1d | 2015-01-03 | 2015-01-03 |  |  |  |
| 183 |  | Analizar y Especificar los requerimientos | 1d | 2015-01-03 | 2015-01-03 |  |  |  |
| 184 |  | Diseñar Solución | 1d | 2015-01-03 | 2015-01-03 |  |  |  |
| 185 |  | Desarrollar | 1d | 2015-01-03 | 2015-01-03 |  |  |  |
| 186 |  | Testear | 1d | 2015-01-03 | 2015-01-03 |  |  |  |
| 187 |  | Implementar | 1d | 2015-01-03 | 2015-01-03 |  |  |  |
| 188 |  | Gestionar cambios | 1d | 2015-01-03 | 2015-01-03 |  |  |  |
| 189 |  | Realizar seguimiento y control de riesgos | 1d | 2015-01-03 | 2015-01-03 |  |  |  |
| 190 |  | Realizar Sprint Review | 1d | 2015-01-03 | 2015-01-03 |  |  |  |
| 191 |  | Realizar reunión retrospectiva | 1d | 2015-01-24 | 2015-01-24 |  |  |  |
| 192 | 24 | **Sprint 11** | 21d | 2015-01-24 | 2015-02-13 | 191 |  |  |
| 193 |  | Realizar Sprint Planning | 1d | 2015-01-24 | 2015-01-24 |  |  |  |
| 194 |  | Analizar y Especificar los requerimientos | 1d | 2015-01-24 | 2015-01-24 |  |  |  |
| 195 |  | Diseñar Solución | 1d | 2015-01-24 | 2015-01-24 |  |  |  |
| 196 |  | Desarrollar | 1d | 2015-01-24 | 2015-01-24 |  |  |  |
| 197 |  | Testear | 1d | 2015-01-24 | 2015-01-24 |  |  |  |
| 198 |  | Implementar | 1d | 2015-01-24 | 2015-01-24 |  |  |  |
| 199 |  | Gestionar cambios | 1d | 2015-01-24 | 2015-01-24 |  |  |  |
| 200 |  | Realizar seguimiento y control de riesgos | 1d | 2015-01-24 | 2015-01-24 |  |  |  |
| 201 |  | Realizar Sprint Review | 1d | 2015-01-24 | 2015-01-24 |  |  |  |
| 202 |  | Realizar reunión retrospectiva | 1d | 2015-02-15 | 2015-02-15 |  |  |  |
| 203 | 26 | **Sprint 12** | 21d | 2015-02-15 | 2015-03-07 | 202 |  |  |
| 204 |  | Realizar Sprint Planning | 1d | 2015-02-15 | 2015-02-15 |  |  |  |
| 205 |  | Analizar y Especificar los requerimientos | 1d | 2015-02-15 | 2015-02-15 |  |  |  |
| 206 |  | Diseñar Solución | 1d | 2015-02-15 | 2015-02-15 |  |  |  |
| 207 |  | Desarrollar | 1d | 2015-02-15 | 2015-02-15 |  |  |  |
| 208 |  | Testear | 1d | 2015-02-15 | 2015-02-15 |  |  |  |
| 209 |  | Implementar | 1d | 2015-02-15 | 2015-02-15 |  |  |  |
| 210 |  | Gestionar cambios | 1d | 2015-02-15 | 2015-02-15 |  |  |  |

| ID | WBS | Task | Duration | Start | Finish | Predecessors | Total float |
| --- | --- | --- | --- | --- | --- | --- | --- |
| 211 |  | Realizar seguimiento y control de riesgos | 1d | 2015-02-15 | 2015-02-15 |  |  |
| 212 |  | Realizar Sprint Review | 1d | 2015-02-15 | 2015-02-15 |  |  |
| 213 |  | Realizar reunión retrospectiva | 1d | 2015-03-07 | 2015-03-07 |  |  |
| 214 | 28 | **Sprint 13** | 22d | 2015-03-07 | 2015-03-28 | 213 |  |
| 215 |  | Realizar Sprint Planning | 1d | 2015-03-07 | 2015-03-07 |  |  |
| 216 |  | Analizar y Especificar los requerimientos | 1d | 2015-03-07 | 2015-03-07 |  |  |
| 217 |  | Diseñar Solución | 1d | 2015-03-07 | 2015-03-07 |  |  |
| 218 |  | Desarrollar | 1d | 2015-03-07 | 2015-03-07 |  |  |
| 219 |  | Testear | 1d | 2015-03-07 | 2015-03-07 |  |  |
| 220 |  | Implementar | 1d | 2015-03-07 | 2015-03-07 |  |  |
| 221 |  | Gestionar cambios | 1d | 2015-03-07 | 2015-03-07 |  |  |
| 222 |  | Realizar seguimiento y control de riesgos | 1d | 2015-03-07 | 2015-03-07 |  |  |
| 223 |  | Realizar Sprint Review | 1d | 2015-03-07 | 2015-03-07 |  |  |
| 224 |  | Realizar reunión retrospectiva | 1d | 2015-03-28 | 2015-03-28 |  |  |
| 225 | 30 | **Sprint 14** | 22d | 2015-03-28 | 2015-04-18 | 224 |  |
| 226 | 30.1 | **Realizar Presentación Final** | 1d | 2015-03-28 | 2015-03-28 |  | 0d |
| 227 |  | Preparar presentación | 1d | 2015-03-28 | 2015-03-28 |  |  |
| 228 |  | Elaborar presentación | 1d | 2015-03-28 | 2015-03-28 |  |  |
| 229 |  | Exponer | 1d | 2015-03-28 | 2015-03-28 |  |  |

## Version 2 (saved 2014-06-10)

Note of the change: - Se modificó el Estudio Inicial- Grupo 3.docx, la Planificación.mpp y la WBS.docx

Last finish stays 2015-04-18. Complete tasks 24 → 28.

Changed:

| ID | Task | Start | Finish | Complete | Total float | Other |
| --- | --- | --- | --- | --- | --- | --- |
| 1 | **Sprint 0** |  |  | 75% → 89% | 3d → 0d |  |
| 2 | **Realizar Propuesta Inicial** |  | 2014-04-08 A | 99% → 100% | 0d → none |  |
| 19 | Realizar plan de configuración | 2014-05-07 A |  | 0% → 90% |  |  |
| 24 | **Realizar Plan de Métricas** |  | 2014-05-26 A | 80% → 100% | 0d → none | resources Antonio → Paula |
| 25 | Identificar metricas |  | 2014-05-26 A | 80% → 100% |  | resources Antonio → Paula |
| 26 | Definir responsables y método de medicion |  | 2014-05-26 A | 80% → 100% |  | resources Antonio → Paula |
| 32 | Analizar Impacto Ambiental |  |  |  |  | resources none → Antonio; Facu; Florencia; Paula |
| 37 | **Preparar Product Backlog** | 2014-05-29 A |  | 0% → 30% |  | resources none → Antonio; Paula |
| 38 | Identificar historias de usuario | 2014-05-29 A |  | 0% → 30% |  |  |
| 39 | Priorizar historias de usuario | 2014-05-29 A |  | 0% → 30% |  |  |
| 40 | Estimar historias de usuario | 2014-05-29 A |  | 0% → 30% |  |  |
| 41 | **Realizar ERS** | 2014-05-29 A |  | 0% → 80% | 5d → 0d | resources none → Antonio; Facu; Florencia; Paula |
| 42 | Entrevistar expertos en dominio | 2014-05-29 A |  | 0% → 80% | 5d → 0d |  |
| 43 | Identificar funcionalidades | 2014-05-29 A |  | 0% → 80% | 5d → 0d |  |
| 44 | Especificar funcionalidades | 2014-05-29 A |  | 0% → 80% | 5d → 0d |  |
| 45 | Definir reglas de negocio | 2014-05-29 A |  | 0% → 80% | 5d → 0d |  |
| 46 | **Definir Metodología y Herramientas de Trabajo** | 2014-06-01 A | 2014-06-01 A | 0% → 100% | 5d → none | resources none → Antonio; Facu; Florencia; Paula |
| 47 | Definir y preparar entorno de trabajo | 2014-06-01 A | 2014-06-01 A | 0% → 100% | 5d → none |  |
| 48 | Definir ciclo de vida del sw | 2014-06-01 A | 2014-06-01 A | 0% → 100% | 5d → none |  |

## Version 3 (saved 2014-06-10)

Note of the change: - Se modificó la Especificación de Requerimientos de Software.docx

Last finish stays 2015-04-18.

Added:

| ID | Task | Duration | Start | Finish | Predecessors |
| --- | --- | --- | --- | --- | --- |
| 225 | **Sprint 15** | 22d | 2015-03-28 | 2015-04-18 | 224 |

Removed: 181 Sprint 10

Changed:

| ID | Task | Start | Finish | Duration | Predecessors |
| --- | --- | --- | --- | --- | --- |
| 181 | **Sprint 11** | 2015-01-24 → 2015-01-03 (-21d) | 2015-02-13 → 2015-01-24 (-20d) | 21d → 22d | 191 → 180 |
| 192 | **Sprint 12** | 2015-02-15 → 2015-01-24 (-22d) | 2015-03-07 → 2015-02-13 (-22d) |  | 202 → 191 |
| 203 | **Sprint 13** | 2015-03-07 → 2015-02-15 (-20d) | 2015-03-28 → 2015-03-07 (-21d) | 22d → 21d | 213 → 202 |
| 214 | **Sprint 14** | 2015-03-28 → 2015-03-07 (-21d) | 2015-04-18 → 2015-03-28 (-21d) |  | 224 → 213 |

## Version 4 (saved 2014-08-30)

Last finish stays 2015-04-18. Complete tasks 28 → 102.

Added:

| ID | Task | Duration | Start | Finish | Resources |
| --- | --- | --- | --- | --- | --- |
| 58 | Diseño de UI | 11d | 2014-06-14 A | 2014-06-24 A | Facu |
| 92 | Investigar Algoritmos de Generación de fixture | 1d | 2014-08-09 A | 2014-08-10 | Antonio; Florencia |
| 93 | **Administrar Canchas** | 21d | 2014-08-09 A | 2014-08-30 A | Paula |
| 94 | **Registrar Cancha** | 21d | 2014-08-09 A | 2014-08-30 |  |
| 95 | Desarrollo | 1d | 2014-08-09 A | 2014-08-10 A |  |
| 96 | Testing | 1d | 2014-08-09 A | 2014-08-10 A |  |
| 97 | **Modificar Cancha** | 21d | 2014-08-09 A | 2014-08-30 |  |
| 98 | Desarrollo | 1d | 2014-08-09 A | 2014-08-10 A |  |
| 99 | Testing | 1d | 2014-08-09 A | 2014-08-10 A |  |
| 100 | **Eliminar Cancha** | 21d | 2014-08-09 A | 2014-08-30 |  |
| 101 | Desarrollo | 1d | 2014-08-09 A | 2014-08-10 A |  |
| 102 | Testing | 1d | 2014-08-09 A | 2014-08-10 A |  |
| 103 | **Consultar Cancha** | 21d | 2014-08-09 A | 2014-08-30 |  |
| 104 | Desarrollo | 1d | 2014-08-09 A | 2014-08-10 A |  |
| 105 | Testing | 1d | 2014-08-09 A | 2014-08-10 A |  |
| 106 | **Administrar Jugadores** | 21d | 2014-08-09 A | 2014-08-29 A | Paula; Facu |
| 107 | **Registrar Jugador** | 21d | 2014-08-09 A | 2014-08-29 |  |
| 108 | Desarrollo | 2d | 2014-08-09 A | 2014-08-10 A |  |
| 109 | Testing | 2d | 2014-08-09 A | 2014-08-10 A |  |
| 110 | **Modificar Jugador** | 21d | 2014-08-09 A | 2014-08-29 |  |
| 111 | Desarrollo | 2d | 2014-08-09 A | 2014-08-10 A |  |
| 112 | Testing | 1d | 2014-08-09 A | 2014-08-09 A |  |
| 113 | **Eliminar Jugador** | 21d | 2014-08-09 A | 2014-08-29 |  |
| 114 | Desarrollo | 1d | 2014-08-09 A | 2014-08-09 A |  |
| 115 | Testing | 1d | 2014-08-09 A | 2014-08-09 A |  |
| 116 | Consultar Jugador | 21d | 2014-08-09 A | 2014-08-29 A |  |
| 117 | **Administrar Equipos** | 21d | 2014-08-09 A | 2014-08-30 A | Paula; Facu |
| 118 | **Eliminar Equipo** | 21d | 2014-08-09 A | 2014-08-30 |  |
| 119 | Desarrollo | 1d | 2014-08-09 A | 2014-08-10 A |  |
| 120 | Testing | 1d | 2014-08-09 A | 2014-08-10 A |  |
| 121 | **Administrar Árbitros** | 21d | 2014-08-09 A | 2014-08-29 A | Paula |
| 122 | **Registrar Árbitro** | 21d | 2014-08-09 A | 2014-08-29 |  |
| 123 | Desarrollo | 1d | 2014-08-10 A | 2014-08-10 A |  |
| 124 | Testing | 1d | 2014-08-09 A | 2014-08-09 A |  |
| 125 | **Modificar Árbitro** | 1d | 2014-08-09 A | 2014-08-09 A |  |
| 126 | Desarrollo | 1d | 2014-08-09 A | 2014-08-09 A |  |
| 127 | Testing | 1d | 2014-08-09 A | 2014-08-09 A |  |
| 128 | **Eliminar Árbitro** | 1d | 2014-08-09 A | 2014-08-09 A |  |
| 129 | Desarrollo | 1d | 2014-08-09 A | 2014-08-09 A |  |
| 130 | Testing | 1d | 2014-08-09 A | 2014-08-09 A |  |
| 131 | **Consultar Árbitro** | 1d | 2014-08-09 A | 2014-08-09 A |  |
| 132 | Desarrollo | 1d | 2014-08-09 A | 2014-08-09 A |  |
| 133 | Testing | 1d | 2014-08-09 A | 2014-08-09 A |  |
| 134 | **Modificar Usuario** | 21d | 2014-08-09 A | 2014-08-30 A | Florencia |
| 135 | Desarrollo | 1d | 2014-08-09 A | 2014-08-10 A |  |
| 136 | Testing | 1d | 2014-08-09 A | 2014-08-10 A |  |
| 137 | **Administrar Edición** | 21d | 2014-08-09 A | 2014-08-30 | Antonio; Facu; Florencia; Paula |
| 138 | **Eliminar Edición No Comenzada** | 21d | 2014-08-10 | 2014-08-30 | Antonio; Facu; Florencia; Paula |
| 139 | Desarrollo | 1d? | 2014-08-10 | 2014-08-10 | Paula |
| 140 | Testing | 1d? | 2014-08-10 | 2014-08-10 |  |
| 141 | **Modificar Edición No Comenzada** | 21d | 2014-08-09 | 2014-08-30 |  |
| 142 | Desarrollo | 1d? | 2014-08-09 | 2014-08-10 | Paula |
| 143 | Testing | 1d? | 2014-08-09 | 2014-08-10 |  |
| 144 | **Registrar Configuraciones** | 21d | 2014-08-09 A | 2014-08-30 |  |
| 145 | Desarrollo | 1d | 2014-08-09 A | 2014-08-10 A | Antonio; Florencia |
| 146 | Testing | 1d? | 2014-08-09 | 2014-08-10 |  |
| 147 | **Asignar equipos a la edición** | 21d | 2014-08-09 A | 2014-08-30 |  |
| 148 | Diseño de Interfaz | 1d? | 2014-08-09 A | 2014-08-10 | Facu |
| 151 | **Generación de Fixture Todos contra todos** | 21d | 2014-08-09 A | 2014-08-30 | Antonio; Facu; Florencia |
| 152 | **Registrar Fase** | 21d | 2014-08-09 A | 2014-08-30 |  |
| 153 | Diseño de solución | 1d | 2014-08-09 A | 2014-08-10 A | Antonio; Florencia |
| 154 | Diseño de Interfaz | 1d? | 2014-08-09 | 2014-08-10 | Antonio; Facu |
| 155 | Desarrollo | 1d? | 2014-08-09 A | 2014-08-10 | Florencia |
| 156 | Testing | 1d? | 2014-08-09 | 2014-08-10 |  |
| 157 | **Mostrar Fixture** | 21d | 2014-08-10 | 2014-08-30 |  |
| 158 | Diseño de Interfaz | 1d? | 2014-08-10 | 2014-08-10 | Antonio; Facu |
| 159 | Desarrollo | 1d? | 2014-08-10 | 2014-08-10 | Florencia; Paula |
| 160 | Testing | 1d | 2014-08-10 | 2014-08-10 |  |
| 174 | Registrar Momento de Gol y Jugador | 1d? | 2014-08-30 | 2014-08-30 |  |
| 175 | Registrar penales | 1d? | 2014-08-30 | 2014-08-30 |  |
| 176 | Corrección de Bugs | 1d? | 2014-05-03 | 2014-05-03 |  |

Removed: 59 Implementar; 92 Analizar y Especificar los requerimientos; 93 Diseñar Solución; 94 Actualizar modelos existentes; 95 Crear nuevos modelos; 98 Implementar; 99 Gestionar cambios; 100 Realizar seguimiento y control de riesgos; 119 Diseñar Solución; 120 Actualizar modelos existentes; 121 Crear nuevos modelos; 122 Desarrollar; 123 Testear; 124 Implementar; 125 Gestionar cambios; 126 Realizar seguimiento y control de riesgos; 127 Realizar Sprint Review; 132 Diseñar Solución; 133 Actualizar modelos existentes; 134 Crear nuevos modelos; 135 Desarrollar; 136 Testear; 137 Implementar; 138 Gestionar cambios; 139 Realizar seguimiento y control de riesgos

Changed:

| ID | Task | Start | Finish | Duration | Complete | Total float | Other |
| --- | --- | --- | --- | --- | --- | --- | --- |
| 1 | **Sprint 0** |  | 2014-06-03 A |  | 89% → 100% | 0d → none |  |
| 12 | **Realizar Estudio Inicial** |  | 2014-05-09 A |  | 99% → 100% | 0d → none |  |
| 19 | Realizar plan de configuración |  | 2014-05-13 A |  | 90% → 100% |  |  |
| 32 | Analizar Impacto Ambiental | 2014-05-20 A | 2014-05-26 A |  | 0% → 100% |  |  |
| 37 | **Preparar Product Backlog** |  | 2014-06-03 A |  | 30% → 100% |  |  |
| 38 | Identificar historias de usuario |  | 2014-06-01 A |  | 30% → 100% | 2d → none |  |
| 39 | Priorizar historias de usuario |  | 2014-06-01 A |  | 30% → 100% | 2d → none |  |
| 40 | Estimar historias de usuario |  | 2014-06-01 A |  | 30% → 100% | 2d → none |  |
| 41 | **Realizar ERS** |  | 2014-05-31 A |  | 80% → 100% | 0d → none |  |
| 42 | Entrevistar expertos en dominio |  | 2014-05-31 A |  | 80% → 100% | 0d → none |  |
| 43 | Identificar funcionalidades |  | 2014-05-31 A |  | 80% → 100% | 0d → none |  |
| 44 | Especificar funcionalidades |  | 2014-05-31 A |  | 80% → 100% | 0d → none |  |
| 45 | Definir reglas de negocio |  | 2014-05-31 A |  | 80% → 100% | 0d → none |  |
| 49 | **Sprint 1** | 2014-06-07 A | 2014-06-28 A |  | 0% → 100% |  |  |
| 50 | Realizar Sprint Planning | 2014-06-07 A | 2014-06-07 A | 1d? → 1d | 0% → 100% |  | resources none → Antonio; Facu; Florencia; Paula |
| 51 | Investigar tecnologías de desarrollo | 2014-06-07 A | 2014-06-07 → 2014-06-28 A (+21d) | 1d? → 22d | 0% → 100% |  | resources none → Facu; Paula |
| 52 | Investigar Algoritmos de Generación de fixture | 2014-06-07 A | 2014-06-07 → 2014-06-28 A (+21d) | 1d? → 22d | 0% → 100% |  | resources none → Antonio; Florencia |
| 53 | Analizar y Especificar los requerimientos | 2014-06-07 A | 2014-06-07 → 2014-06-14 A (+7d) | 1d? → 8d | 0% → 100% |  | resources none → Antonio; Florencia |
| 54 | **Diseñar Solución** | 2014-06-07 → 2014-06-14 A (+7d) | 2014-06-07 → 2014-06-14 A (+7d) | 1d? → 1d | 0% → 100% |  |  |
| 55 | Actualizar modelos existentes | 2014-06-07 → 2014-06-14 A (+7d) | 2014-06-07 → 2014-06-14 A (+7d) | 1d? → 1d | 0% → 100% |  |  |
| 56 | Crear nuevos modelos | 2014-06-07 → 2014-06-14 A (+7d) | 2014-06-07 → 2014-06-14 A (+7d) |  | 0% → 100% |  |  |
| 57 | Desarrollar | 2014-06-07 → 2014-06-21 A (+14d) | 2014-06-07 → 2014-06-26 A (+19d) | 1d → 6d | 0% → 100% |  | resources none → Antonio; Facu; Paula |
| 59 | Testear | 2014-06-07 → 2014-06-26 A (+19d) | 2014-06-07 → 2014-06-28 A (+21d) | 1d? → 3d | 0% → 100% |  | resources none → Paula |
| 60 | Gestionar cambios | 2014-06-07 A | 2014-06-07 → 2014-06-28 A (+21d) | 1d? → 22d | 0% → 100% |  | resources none → Florencia |
| 61 | Realizar seguimiento y control de riesgos | 2014-06-07 A | 2014-06-07 → 2014-06-28 A (+21d) | 1d? → 22d | 0% → 100% |  | resources none → Facu |
| 62 | Realizar Sprint Review | 2014-06-07 → 2014-06-28 A (+21d) | 2014-06-07 → 2014-06-28 A (+21d) | 1d? → 1d | 0% → 100% |  | resources none → Antonio; Facu; Florencia; Paula |
| 63 | Realizar reunión retrospectiva | 2014-06-28 A | 2014-06-28 A |  | 0% → 100% | -1d → none |  |
| 64 | **Sprint 2** | 2014-06-28 A |  |  | 0% → 100% |  |  |
| 65 | Realizar Sprint Planning | 2014-06-28 A | 2014-06-28 A | 1d? → 1d | 0% → 100% |  |  |
| 66 | Analizar y Especificar los requerimientos | 2014-06-28 A | 2014-06-28 A | 1d? → 1d | 0% → 100% |  |  |
| 67 | **Diseñar Solución** | 2014-06-28 A | 2014-06-28 A |  | 0% → 100% |  |  |
| 68 | Actualizar modelos existentes | 2014-06-28 A | 2014-06-28 A |  | 0% → 100% |  |  |
| 69 | Crear nuevos modelos | 2014-06-28 A | 2014-06-28 A |  | 0% → 100% |  |  |
| 70 | Desarrollar | 2014-06-28 A | 2014-06-28 A |  | 0% → 100% |  |  |
| 71 | Testear | 2014-06-28 A | 2014-06-28 A |  | 0% → 100% |  |  |
| 72 | Implementar | 2014-06-28 A | 2014-06-28 A |  | 0% → 100% |  |  |
| 73 | Gestionar cambios | 2014-06-28 A | 2014-06-28 A |  | 0% → 100% |  |  |
| 74 | Realizar seguimiento y control de riesgos | 2014-06-28 A | 2014-06-28 A |  | 0% → 100% |  |  |
| 75 | Realizar Sprint Review | 2014-06-28 A | 2014-06-28 A |  | 0% → 100% |  |  |
| 76 | Realizar reunión retrospectiva | 2014-07-19 A | 2014-07-19 A |  | 0% → 100% | -1d → none |  |
| 77 | **Sprint 3** | 2014-07-19 A |  |  | 0% → 100% |  |  |
| 78 | Realizar Sprint Planning | 2014-07-19 A | 2014-07-19 A |  | 0% → 100% |  |  |
| 79 | Analizar y Especificar los requerimientos | 2014-07-19 A | 2014-07-19 A |  | 0% → 100% |  |  |
| 80 | **Diseñar Solución** | 2014-07-19 A | 2014-07-19 A |  | 0% → 100% |  |  |
| 81 | Actualizar modelos existentes | 2014-07-19 A | 2014-07-19 A |  | 0% → 100% |  |  |
| 82 | Crear nuevos modelos | 2014-07-19 A | 2014-07-19 A |  | 0% → 100% |  |  |
| 83 | Desarrollar | 2014-07-19 A | 2014-07-19 A |  | 0% → 100% |  |  |
| 84 | Testear | 2014-07-19 A | 2014-07-19 A |  | 0% → 100% |  |  |
| 85 | Implementar | 2014-07-19 A | 2014-07-19 A |  | 0% → 100% |  |  |
| 86 | Gestionar cambios | 2014-07-19 A | 2014-07-19 A |  | 0% → 100% |  |  |
| 87 | Realizar seguimiento y control de riesgos | 2014-07-19 A | 2014-07-19 A |  | 0% → 100% |  |  |
| 88 | Realizar Sprint Review | 2014-07-19 A | 2014-07-19 A |  | 0% → 100% |  |  |
| 89 | Realizar reunión retrospectiva | 2014-08-09 A | 2014-08-09 A |  | 0% → 100% | 0d → none |  |
| 90 | **Sprint 4** | 2014-08-09 A |  |  | 0% → 80% |  |  |
| 91 | Realizar Sprint Planning | 2014-08-09 A | 2014-08-10 A |  | 0% → 100% |  | resources none → Antonio; Facu; Florencia; Paula |
| 149 | Desarrollar | 2014-08-09 A |  | 1d → 1d? | 0% → 50% |  | resources none → Paula |
| 150 | Testear |  |  | 1d → 1d? |  |  |  |
| 161 | Realizar Sprint Review | 2014-08-09 → 2014-08-30 (+21d) | 2014-08-10 → 2014-08-30 (+20d) |  |  | none → 231d | constraint none → finish no earlier than 2014-08-30; resources none → Antonio; Facu; Florencia; Paula |
| 162 | Realizar reunión retrospectiva | 2014-10-25 → 2014-08-30 (-56d) | 2014-10-25 → 2014-08-30 (-56d) |  |  | -57d → -1d | constraint start no earlier than 2014-10-25 → start no earlier than 2014-08-30; resources none → Antonio; Facu; Florencia; Paula |
| 165 | Administrar Jugadores |  |  |  |  |  | was named Analizar y Especificar los requerimientos |
| 166 | Administrar Partidos |  |  |  |  |  | was named Diseñar Solución |
| 167 | Generación de Fixture Eliminatorias |  |  | 1d → 1d? |  |  | was named Actualizar modelos existentes |
| 168 | Generación de Fixture Eliminatorias Ida y Vuelta |  |  | 1d → 1d? |  |  | was named Crear nuevos modelos |
| 169 | Dar Baja Lógica de Campeonato |  |  |  |  |  | was named Desarrollar |
| 170 | Modificación de datos de un usuario |  |  | 1d → 1d? |  |  | was named Testear |
| 171 | **Administración de Partidos** |  |  | 1d → 1d? |  |  | was named Implementar |
| 172 | Registrar Resultados del Partido |  |  | 1d → 1d? |  |  | was named Gestionar cambios |
| 173 | Registrar Tarjetas por Partido |  |  | 1d → 1d? |  |  | was named Realizar seguimiento y control de riesgos |
| 177 | Realizar Sprint Review | 2014-08-30 → 2014-05-03 (-119d) | 2014-08-30 → 2014-05-03 (-119d) | 1d → 1d? |  |  |  |
| 178 | Realizar reunión retrospectiva | 2014-11-29 → 2014-05-03 (-210d) | 2014-11-29 → 2014-05-03 (-210d) |  |  | -71d → 350d | constraint start no earlier than 2014-11-29 → none |

| ID | Task | Predecessors | Other |
| --- | --- | --- | --- |
| 179 | **Sprint 6** | 178 → 175 |  |
| 181 | Corrección de Bugs |  | was named Analizar y Especificar los requerimientos |
| 185 | Armar Manual de usuario |  | was named Analizar y Especificar los requerimientos |

## Version 5 (saved 2014-09-21)

Note of the change: Actualizacion de modelos y Planificacion para el Sprint 6

Last finish stays 2015-04-18. Complete tasks 102 → 128.

Added:

| ID | Task | Duration | Start | Finish | Resources |
| --- | --- | --- | --- | --- | --- |
| 166 | **Administrar Noticias** | 12d | 2014-09-02 A | 2014-09-13 A | Paula |
| 167 | Registrar Noticias | 12d | 2014-09-02 A | 2014-09-13 A | Paula |
| 168 | Modificar Noticias | 12d | 2014-09-02 A | 2014-09-13 A | Paula |
| 169 | Eliminar Noticias | 12d | 2014-09-02 A | 2014-09-13 A | Paula |
| 170 | Consultar Noticias | 12d | 2014-09-02 A | 2014-09-13 A | Paula |
| 172 | Diseño de IU | 8d | 2014-09-13 A | 2014-09-20 A | Facu |
| 179 | Generar fixture todos contra todos una fase - muchos grupos | 8d | 2014-09-20 | 2014-09-27 | Antonio; Florencia |
| 180 | Modificar Configuracion de edición | 8d | 2014-09-20 | 2014-09-27 | Florencia |
| 181 | Registrar para un partido fecha, hora y arbitro a asignar | 18d | 2014-09-20 | 2014-10-07 | Facu; Paula |
| 182 | Registrar post partido, sanciones, goles, cambios, jugadores que jugaron | 18d | 2014-09-20 | 2014-10-07 | Facu; Paula |
| 183 | Modificar orden de las fechas de fixture una fase - 1 grupo, todos contra todos | 8d | 2014-09-20 | 2014-09-27 | Facu; Paula |
| 184 | Diseño de la solución para registrar partidos | 8d | 2014-09-23 | 2014-09-30 | Antonio; Facu; Florencia; Paula |
| 185 | Actualizar BD | 8d | 2014-09-20 | 2014-09-27 | Paula |
| 186 | Generar fixture Una fase por eliminatoria | 12d | 2014-09-30 | 2014-10-11 | Antonio; Florencia |
| 187 | Testear todas las funcionalidades | 15d | 2014-09-20 | 2014-10-04 | Florencia; Paula |
| 192 | Generar fixture mas de una fase | 1d? | 2014-10-11 | 2014-10-11 |  |
| 193 | <Tarea nueva> | 1d? | 2014-10-11 | 2014-10-11 |  |

Removed: 167 Generación de Fixture Eliminatorias; 168 Generación de Fixture Eliminatorias Ida y Vuelta; 169 Dar Baja Lógica de Campeonato; 171 Administración de Partidos; 172 Registrar Resultados del Partido; 173 Registrar Tarjetas por Partido; 174 Registrar Momento de Gol y Jugador; 175 Registrar penales

Changed:

| ID | Task | Start | Finish | Duration | Complete | Total float | Predecessors | Other |
| --- | --- | --- | --- | --- | --- | --- | --- | --- |
| 90 | **Sprint 4** |  |  |  | 80% → 97% |  |  |  |
| 137 | **Administrar Edición** |  |  |  | 26% → 78% |  |  |  |
| 141 | **Modificar Edición No Comenzada** | 2014-08-09 A |  |  | 0% → 100% |  |  |  |
| 142 | Desarrollo | 2014-08-09 A | 2014-08-10 A | 1d? → 1d | 0% → 100% |  |  |  |
| 143 | Testing | 2014-08-09 A | 2014-08-10 A | 1d? → 1d | 0% → 100% |  |  |  |
| 144 | **Registrar Configuraciones** |  |  |  | 50% → 100% |  |  |  |
| 146 | Testing | 2014-08-09 A | 2014-08-10 A | 1d? → 1d | 0% → 100% |  |  |  |
| 147 | **Asignar equipos a la edición** |  |  |  | 43% → 100% |  |  |  |
| 148 | Diseño de Interfaz |  | 2014-08-10 A | 1d? → 1d | 80% → 100% |  |  |  |
| 149 | Desarrollar |  | 2014-08-10 A | 1d? → 1d | 50% → 100% |  |  |  |
| 150 | Testear | 2014-08-09 A | 2014-08-10 A | 1d? → 1d | 0% → 100% |  |  |  |
| 151 | **Generación de Fixture Todos contra todos** |  | 2014-08-30 A |  | 21% → 100% |  |  |  |
| 152 | **Registrar Fase** |  |  |  | 38% → 100% |  |  |  |
| 154 | Diseño de Interfaz | 2014-08-09 A | 2014-08-10 A | 1d? → 1d | 0% → 100% |  |  |  |
| 155 | Desarrollo |  | 2014-08-10 A | 1d? → 1d | 50% → 100% |  |  |  |
| 156 | Testing | 2014-08-09 A | 2014-08-10 A | 1d? → 1d | 0% → 100% |  |  |  |
| 157 | **Mostrar Fixture** | 2014-08-10 A |  |  | 0% → 100% |  |  |  |
| 158 | Diseño de Interfaz | 2014-08-10 A | 2014-08-10 A | 1d? → 1d | 0% → 100% |  |  |  |
| 159 | Desarrollo | 2014-08-10 A | 2014-08-10 A | 1d? → 1d | 0% → 100% |  |  |  |
| 160 | Testing | 2014-08-10 A | 2014-08-10 A |  | 0% → 100% | 20d → none |  |  |
| 161 | Realizar Sprint Review | 2014-08-30 A | 2014-08-30 A |  | 0% → 100% | 231d → none |  |  |
| 162 | Realizar reunión retrospectiva | 2014-08-30 A | 2014-08-30 A |  | 0% → 100% | -1d → none |  |  |
| 163 | **Sprint 5** | 2014-08-30 A | 2014-09-20 A |  | 0% → 100% |  |  |  |
| 164 | Realizar Sprint Planning | 2014-08-30 A | 2014-08-30 A |  | 0% → 100% |  |  | resources none → Antonio; Facu; Florencia; Paula |
| 165 | Administrar Jugadores | 2014-08-30 → 2014-09-02 A (+3d) | 2014-08-30 → 2014-09-06 A (+7d) | 1d → 5d | 0% → 100% |  |  | resources none → Facu; Paula |
| 171 | **Administrar Partidos** | 2014-08-30 → 2014-09-13 A (+14d) | 2014-08-31 → 2014-09-20 A (+20d) | 2d? → 8d | 0% → 100% |  |  | resources none → Florencia; Facu |
| 173 | Modificación de datos de un usuario | 2014-08-30 A | 2014-08-30 → 2014-09-02 A (+3d) | 1d? → 4d | 0% → 100% |  |  | resources none → Florencia |
| 174 | Corrección de Bugs | 2014-05-03 → 2014-09-09 A (+129d) | 2014-05-03 → 2014-09-20 A (+140d) | 1d? → 12d | 0% → 100% |  |  | resources none → Antonio; Facu |
| 175 | Realizar Sprint Review | 2014-05-03 → 2014-09-20 A (+140d) | 2014-05-03 → 2014-09-20 A (+140d) | 1d? → 1d | 0% → 100% |  |  | resources none → Antonio; Facu; Florencia; Paula |
| 176 | Realizar reunión retrospectiva | 2014-05-03 A | 2014-05-03 A |  | 0% → 100% | 350d → none |  |  |
| 177 | **Sprint 6** | 2014-09-20 A |  |  | 0% → 1% |  | Registrar penales → none |  |
| 178 | Realizar Sprint Planning | 2014-09-20 A | 2014-09-20 A |  | 0% → 100% |  |  | resources none → Antonio; Facu; Florencia; Paula |
| 188 | Corrección de Bugs |  | 2014-09-20 → 2014-10-04 (+14d) | 1d → 15d |  |  |  | resources none → Antonio; Facu; Florencia; Paula |

## Version 6 (saved 2014-10-25)

Note of the change: Actualización planificación

Last finish stays 2015-04-18. Complete tasks 128 → 172.

Added:

| ID | Task | Duration | Start | Finish | Resources |
| --- | --- | --- | --- | --- | --- |
| 52 | **Registrar Edición** | 22d | 2014-06-07 A | 2014-06-28 A | Facu; Paula |
| 54 | Diseñar Solución | 1d | 2014-06-07 A | 2014-06-07 A |  |
| 56 | Diseño de UI | 1d | 2014-06-07 A | 2014-06-07 A |  |
| 59 | Analizar y Especificar los requerimientos | 1d | 2014-06-07 A | 2014-06-07 A |  |
| 60 | Diseñar Solución | 1d | 2014-06-07 A | 2014-06-07 A |  |
| 62 | Diseño de UI | 1d | 2014-06-07 A | 2014-06-07 A |  |
| 64 | **Registrar Usuario** | 22d | 2014-06-07 A | 2014-06-28 A | Facu; Florencia |
| 72 | Consultar Ediciones y Torneos | 22d | 2014-06-07 A | 2014-06-28 A | Paula |
| 73 | Iniciar Sesión | 22d | 2014-06-07 A | 2014-06-28 A | Facu |
| 74 | Cerrar Sesión | 22d | 2014-06-07 A | 2014-06-28 A | Facu |
| 81 | **Registrar Equipo** | 1d? | 2014-06-28 A | 2014-06-28 A |  |
| 87 | **Modificar Campeonato** | 1d | 2014-06-28 A | 2014-06-28 A |  |
| 88 | Análisis y desarrollo | 1d | 2014-06-28 A | 2014-06-28 A |  |
| 89 | **Corrección de Bugs** | 1d | 2014-06-28 A | 2014-06-28 A |  |
| 90 | Análisis y desarrollo | 1d | 2014-06-28 A | 2014-06-28 A |  |
| 91 | **Registrar opciones de Personalización de Edición** | 1d | 2014-06-28 A | 2014-06-28 A |  |
| 92 | Análisis y desarrollo | 1d | 2014-06-28 A | 2014-06-28 A |  |
| 103 | Reestructuración de Código | 22d | 2014-07-19 A | 2014-08-09 A | Antonio; Facu; Florencia; Paula |
| 104 | **Modificar Equipo** | 8d | 2014-07-19 A | 2014-07-26 A | Paula |
| 105 | Análisis y desarrollo | 1d | 2014-07-19 A | 2014-07-19 A |  |
| 106 | **Consultar Equipo** | 15d | 2014-07-19 A | 2014-08-02 A | Paula |
| 107 | Análisis y desarrollo | 1d | 2014-07-19 A | 2014-07-19 A |  |
| 108 | **Corrección de Bugs** | 28d | 2014-07-13 A | 2014-08-09 A | Antonio; Facu; Florencia; Paula |
| 109 | Análisis y desarrollo | 1d | 2014-07-13 A | 2014-07-13 A |  |
| 110 | Preparacion de presentación de grado de Avances | 1d | 2014-08-09 A | 2014-08-09 A | Antonio; Facu; Florencia; Paula |
| 216 | Mostrar Estadisticas de Fecha | 1d | 2014-10-21 A | 2014-10-21 A | Facu; Florencia |
| 217 | Testing de Funcionalidad | 1d | 2014-10-22 A | 2014-10-22 A | Paula |
| 218 | Corrección de Bugs | 6d | 2014-10-22 A | 2014-10-27 A | Antonio; Facu; Florencia; Paula |
| 220 | Generar informe de Impacto Ambiental | 5d | 2014-10-14 A | 2014-10-18 A | Paula |
| 221 | Revisar Documentos de Requerimientos | 2d | 2014-10-21 A | 2014-10-22 A | Paula |
| 222 | Revisar Modelado | 2d | 2014-10-21 A | 2014-10-22 A | Florencia |
| 224 | Revisar Reglas de Programación | 3d | 2014-10-21 A | 2014-10-23 A | Florencia; Paula |
| 225 | Revisar Plan de Configuración | 3d | 2014-10-21 A | 2014-10-23 A | Florencia |
| 226 | Ver casos de Prueba ejecutados | 1d | 2014-10-24 A | 2014-10-24 A | Florencia; Paula |
| 227 | Revisar Plan de Riesgos | 1d | 2014-10-16 A | 2014-10-17 A | Florencia |
| 228 | Revisar informes de seguimiento | 3d | 2014-10-23 A | 2014-10-25 A | Florencia; Paula |
| 229 | Revisar Documentos de Capacitación e Investigación | 1d | 2014-10-11 A | 2014-10-11 A | Florencia; Paula |
| 230 | Preparar Presentación de Regularidad | 1d | 2014-10-25 A | 2014-10-25 A | Antonio; Facu; Florencia; Paula |

Removed: 72 Implementar; 73 Gestionar cambios; 85 Implementar; 86 Gestionar cambios; 87 Realizar seguimiento y control de riesgos; 198 Realizar Sprint Planning; 200 Diseñar Solución; 201 Actualizar modelos existentes; 202 Crear nuevos modelos; 205 Implementar; 206 Gestionar cambios; 207 Realizar seguimiento y control de riesgos

Changed:

| ID | Task | Start | Finish | Duration | Complete | Total float | Other |
| --- | --- | --- | --- | --- | --- | --- | --- |
| 53 | Analizar y Especificar los requerimientos | 2014-11-01 → 2014-06-07 A (-147d) | 2014-11-01 → 2014-06-07 A (-147d) |  | 0% → 100% |  |  |
| 55 | Desarrollar | 2014-07-19 A → 2014-06-07 A (-42d) | 2014-07-19 A → 2014-06-07 A (-42d) |  |  |  |  |
| 57 | Testear | 2014-07-19 A → 2014-06-07 A (-42d) | 2014-07-19 A → 2014-06-07 A (-42d) |  |  |  |  |
| 58 | **Registrar Campeonato** |  |  |  |  |  | was named Investigar Algoritmos de Generación de fixture; resources Antonio; Florencia → Antonio; Paula |
| 61 | Desarrollar | 2014-11-01 → 2014-06-07 A (-147d) | 2014-11-01 → 2014-06-07 A (-147d) |  | 0% → 100% |  |  |
| 63 | Testear | 2014-11-01 → 2014-06-07 A (-147d) | 2014-11-01 → 2014-06-07 A (-147d) |  | 0% → 100% |  |  |
| 78 | Realizar reunión retrospectiva |  |  |  |  |  | resources none → Antonio; Facu; Florencia; Paula |
| 80 | Realizar Sprint Planning |  |  |  |  |  | resources none → Antonio; Facu; Florencia; Paula |
| 82 | Analizar y Especificar los requerimientos |  |  |  |  |  | resources none → Florencia; Paula |
| 83 | **Diseñar Solución** |  |  |  |  |  | resources none → Florencia |
| 84 | Actualizar modelos existentes |  |  |  |  |  | resources none → Florencia |
| 85 | Crear nuevos modelos |  |  |  |  |  | resources none → Florencia |
| 86 | Desarrollar |  |  |  |  |  | resources none → Antonio; Facu; Florencia; Paula |
| 93 | Testear |  |  |  |  |  | resources none → Paula |
| 94 | Realizar seguimiento y control de riesgos |  |  |  |  |  | resources none → Florencia |
| 95 | Realizar Sprint Review |  |  |  |  |  | resources none → Antonio; Facu; Florencia; Paula |
| 96 | Realizar reunión retrospectiva |  |  |  |  |  | resources none → Antonio; Facu; Florencia; Paula |
| 97 | **Sprint 3** | 2014-07-19 A → 2014-07-19 | 2014-08-09 A |  |  |  |  |
| 98 | Realizar Sprint Planning |  |  |  |  |  | resources none → Antonio; Facu; Florencia; Paula |
| 99 | Analizar y Especificar los requerimientos |  | 2014-07-19 A → 2014-07-22 A (+3d) | 1d → 4d |  |  | resources none → Facu; Florencia |
| 100 | **Diseñar Solución** |  | 2014-07-19 A → 2014-07-22 A (+3d) | 1d? → 4d |  |  | resources none → Antonio; Paula |
| 101 | Actualizar modelos existentes |  | 2014-07-19 A → 2014-07-22 A (+3d) | 1d → 4d |  |  | resources none → Antonio |
| 102 | Crear nuevos modelos |  | 2014-07-19 A → 2014-07-22 A (+3d) | 1d → 4d |  |  | resources none → Paula |
| 111 | Realizar Sprint Review |  |  |  |  |  | resources none → Antonio; Facu; Florencia; Paula |
| 112 | Realizar reunión retrospectiva |  |  |  |  |  | resources none → Antonio; Facu; Florencia; Paula |
| 113 | **Sprint 4** |  | 2014-08-30 A |  | 97% → 100% |  |  |
| 115 | Investigar Algoritmos de Generación de fixture |  | 2014-08-10 A |  | 90% → 100% |  |  |
| 160 | **Administrar Edición** |  | 2014-08-30 A |  | 78% → 100% |  |  |
| 161 | **Eliminar Edición No Comenzada** | 2014-08-10 A | 2014-08-30 A |  | 0% → 100% |  |  |
| 162 | Desarrollo | 2014-08-10 A | 2014-08-10 A | 1d? → 1d | 0% → 100% |  |  |
| 163 | Testing | 2014-08-10 A | 2014-08-10 A | 1d? → 1d | 0% → 100% |  |  |
| 164 | **Modificar Edición No Comenzada** |  | 2014-08-30 A |  |  |  | resources none → Paula |
| 167 | **Registrar Configuraciones** |  | 2014-08-30 A |  |  |  | resources none → Antonio; Florencia |
| 170 | **Asignar equipos a la edición** |  | 2014-08-30 A |  |  |  | resources none → Facu; Paula |
| 199 | Realizar reunión retrospectiva | 2014-05-03 A → 2014-09-20 A (+140d) | 2014-05-03 A → 2014-09-20 A (+140d) |  |  |  | resources none → Antonio; Facu; Florencia; Paula |
| 200 | **Sprint 6** |  | 2014-10-11 A |  | 1% → 100% |  |  |
| 202 | Generar fixture todos contra todos una fase - muchos grupos | 2014-09-20 A | 2014-09-27 A |  | 0% → 100% |  |  |
| 203 | Modificar Configuracion de edición | 2014-09-20 A | 2014-09-27 A |  | 0% → 100% |  |  |
| 204 | Modificar orden de las fechas de fixture una fase - 1 grupo, todos contra todos | 2014-09-20 A | 2014-09-27 A |  | 0% → 100% |  |  |
| 205 | Diseño de la solución para registrar partidos | 2014-09-23 A | 2014-09-30 A |  | 0% → 100% |  |  |
| 206 | Actualizar BD | 2014-09-20 A | 2014-09-27 A |  | 0% → 100% |  |  |
| 207 | Generar fixture Una fase por eliminatoria | 2014-09-30 A | 2014-10-11 A |  | 0% → 100% |  |  |
| 208 | Testear todas las funcionalidades | 2014-09-20 A | 2014-10-04 A |  | 0% → 100% |  |  |
| 209 | Corrección de Bugs | 2014-09-20 A | 2014-10-04 A |  | 0% → 100% |  |  |
| 210 | Realizar reunión retrospectiva | 2015-01-03 → 2014-10-11 A (-84d) | 2015-01-03 → 2014-10-11 A (-84d) |  | 0% → 100% | -85d → none | resources none → Antonio; Facu; Florencia; Paula |
| 211 | **Sprint 7** | 2014-10-11 A |  |  | 0% → 99% |  | resources none → Antonio; Facu; Florencia; Paula |
| 212 | Realizar Sprint Planning - Release | 2014-10-11 A | 2014-10-11 A |  | 0% → 100% |  | was named Realizar Sprint Planning; resources none → Antonio; Facu; Florencia; Paula |
| 213 | Generar fixture mas de una fase | 2014-10-11 → 2014-10-18 A (+7d) | 2014-10-11 → 2014-10-18 A (+7d) | 1d? → 1d | 0% → 100% |  | resources none → Antonio |
| 214 | Registrar para un partido fecha, hora y arbitro a asignar | 2014-09-20 → 2014-10-11 A (+21d) | 2014-10-07 → 2014-10-25 A (+18d) | 18d → 15d | 0% → 100% |  | resources Facu; Paula → Facu |
| 215 | Registrar post partido, sanciones, goles, cambios, jugadores que jugaron | 2014-09-20 → 2014-10-11 A (+21d) | 2014-10-07 → 2014-10-25 A (+18d) | 18d → 15d | 0% → 100% |  | resources Facu; Paula → Facu |
| 219 | Armar Manual de usuario | 2014-10-11 A | 2014-10-11 → 2014-10-14 A (+3d) | 1d → 4d | 0% → 100% |  | resources none → Paula |
| 223 | Revisar Plan de Testing | 2014-10-11 → 2014-10-18 A (+7d) | 2014-10-11 → 2014-10-18 A (+7d) | 1d? → 1d | 0% → 100% |  | was named <Tarea nueva>; resources none → Paula |
| 231 | Realizar Sprint Review | 2014-10-11 → 2014-10-28 (+17d) | 2014-10-11 → 2014-10-28 (+17d) |  |  |  | resources none → Antonio; Facu; Florencia; Paula |
| 232 | Realizar reunión retrospectiva | 2015-01-10 → 2014-11-01 (-70d) | 2015-01-10 → 2014-11-01 (-70d) |  |  | -71d → -1d | constraint start no earlier than 2015-01-10 → start no earlier than 2014-11-01; resources none → Antonio; Facu; Florencia; Paula |

## Version 7 (saved 2015-06-07)

Note of the change: actualizaciones en Planificación.mpp

Last finish 2015-04-18 → 2015-05-25 (+37d). Complete tasks 172 → 348.

Added:

| ID | Task | Duration | Start | Finish | Constraint | Resources |
| --- | --- | --- | --- | --- | --- | --- |
| 234 | **Corrección de Bugs y refactoring** | 1d? | 2014-11-01 A | 2014-11-01 A |  |  |
| 235 | Mejorar pantalla ediciones | 1d | 2014-11-01 A | 2014-11-01 A |  | Facu; Florencia |
| 236 | Deshabilitar campos en la administración de fechas | 1d | 2014-11-01 A | 2014-11-01 A |  | Facu |
| 237 | Restructuración Gestor de Fixture | 1d | 2014-11-01 A | 2014-11-01 A |  | Antonio |
| 238 | Refactorización de DAOS | 1d | 2014-11-01 A | 2014-11-01 A |  | Paula |
| 239 | Corregir ordenamiento tabla de posiciones | 1d | 2014-11-01 A | 2014-11-01 A |  | Florencia |
| 240 | Actualizar BD con Equipos X Grupo | 1d | 2014-11-01 A | 2014-11-01 A |  | Florencia |
| 241 | Correcciones al generar fixture más de una fase | 1d | 2014-11-01 A | 2014-11-01 A |  | Antonio |
| 242 | Generar e implementar un Gestor de Controles | 1d | 2014-11-01 A | 2014-11-01 A |  | Facu |
| 243 | Correcciones varias en estilos | 1d | 2014-11-01 A | 2014-11-01 A |  | Facu |
| 244 | Optimizar metodos de acceso a datos para manejar fixture de mas de una fase | 1d | 2014-11-01 A | 2014-11-01 A |  | Florencia |
| 245 | Optimizar metodos para cerrar fase(solo a nivel de acceso a datos) | 1d | 2014-11-01 A | 2014-11-01 A |  | Florencia |
| 246 | Diseñar UI Administrar Sanciones | 1d | 2014-11-01 A | 2014-11-01 A |  | Paula |
| 265 | Cambios en GestorFase y Edicion | 5d | 2015-01-26 A | 2015-01-30 A |  | Antonio |
| 266 | Correciones en configuración siguiente fase | 5d | 2015-01-26 A | 2015-01-30 A |  | Antonio |
| 267 | bugs en Lista de partidos | 5d | 2015-01-26 A | 2015-01-30 A |  | Antonio |
| 270 | Eliminar Sanciones | 5d | 2015-01-26 A | 2015-01-30 A |  | Paula |
| 271 | Reunión de planificación | 1d | 2015-02-03 A | 2015-02-03 A |  | Antonio; Facu; Florencia; Paula |
| 272 | **Corrección en Index** | 9d | 2015-02-10 A | 2015-02-18 A |  |  |
| 273 | Defectos en Index | 3d | 2015-02-10 A | 2015-02-12 A |  | Florencia |
| 274 | Testing | 1d | 2015-02-18 A | 2015-02-18 A |  | Paula |
| 275 | Testing y corrección de bugs pequeños | 17d | 2015-02-04 A | 2015-02-20 A |  | Paula |
| 276 | **Administración de torneo eliminatorio** | 1d? | 2015-01-26 | 2015-01-26 |  |  |
| 277 | Guardar llaves eliminatorio | 9d | 2015-02-04 A | 2015-02-12 A |  | Antonio |
| 278 | Completar llaves a medida que se juegan los partidos | 3d | 2015-02-18 A | 2015-02-20 A |  | Antonio |
| 279 | **Finalizar Edicion** | 17d | 2015-02-04 A | 2015-02-20 A |  |  |
| 280 | Armar pantalla | 3d | 2015-02-04 A | 2015-02-06 A |  | Florencia |
| 281 | Modificar tabla de posiciones | 2d | 2015-02-10 A | 2015-02-11 A |  | Florencia |
| 282 | Crear metodos de base de datos | 3d | 2015-02-11 A | 2015-02-13 A |  | Florencia |
| 283 | Crear metodos javascript para tomar tabla | 3d | 2015-02-18 A | 2015-02-20 A |  | Antonio |
| 284 | Realizar casos de prueba | 1d | 2015-02-19 A | 2015-02-19 A |  | Paula |
| 285 | Ejecutar casos de prueba | 1d | 2015-02-20 A | 2015-02-20 A |  | Paula |
| 289 | **Tareas de Soporte** | 1d? | 2015-02-20 A | 2015-02-20 |  |  |
| 290 | Actualizar nuevas pantallas | 1d | 2015-02-20 A | 2015-02-20 A |  | Facu |
| 291 | Cancelar edición | 1d | 2015-02-25 A | 2015-02-25 A |  | Paula |
| 292 | Correccion Bug Finalizar Edición | 3d | 2015-02-23 A | 2015-02-25 A |  | Paula; Florencia |
| 293 | Agregar más colores a la paleta de colores | 1d | 2015-02-20 A | 2015-02-20 A |  | Facu |
| 294 | Actualizar BD con tabla de ganadores | 1d | 2015-02-23 A | 2015-02-23 A |  | Paula |
| 295 | Correcciones en estadisticas index | 1d | 2015-02-25 A | 2015-02-25 A |  | Florencia |
| 296 | Diseñar pagina fiche del partido | 1d | 2015-02-26 A | 2015-02-26 A |  | Facu |
| 297 | Agregar nombres a fechas eliminatorias | 1d | 2015-02-24 A | 2015-02-24 A |  | Florencia |
| 298 | Registrar equipos en siguientes llaves | 2d | 2015-02-25 A | 2015-02-26 A |  | Florencia |
| 299 | Correcciones en css | 1d | 2015-02-25 A | 2015-02-25 A |  | Facu |
| 300 | Cambiar rutas relativas por absolutas | 1d | 2015-02-25 A | 2015-02-25 A |  | Facu |
| 301 | Correcion bug sanciones | 1d | 2015-02-26 A | 2015-02-26 A |  | Paula |
| 302 | Despliegue en servidor web para pruebas | 1d | 2015-03-03 A | 2015-03-03 A |  | Facu |
| 303 | Corrección en la eliminación de ediciones | 1d | 2015-02-20 A | 2015-02-20 A |  | Paula |
| 304 | Correcion en el Index | 1d | 2015-03-03 A | 2015-03-03 A |  | Facu |
| 305 | Correccion en metodos javascript para cerrar fase | 1d | 2015-03-03 A | 2015-03-03 A |  | Antonio |
| 306 | Ordenamiento en tabla de posiciones | 1d | 2015-03-09 A | 2015-03-09 A |  | Paula |
| 307 | Registrar partido tercer puesto | 1d | 2015-03-09 A | 2015-03-09 A |  | Florencia |
| 308 | Correccion de bugs cerrar fase | 1d | 2015-03-09 A | 2015-03-09 A |  | Antonio |
| 309 | Actualización y control de la base de datos | 1d? | 2015-02-20 | 2015-02-20 |  | Paula |
| 310 | **Diseño de Estadisticas** | 1d? | 2014-05-03 | 2014-05-03 |  |  |
| 311 | Estadistica Tarjetas | 1d | 2015-02-25 A | 2015-02-25 A |  | Paula |
| 312 | **Cerrar Fase** | 1d? | 2015-02-20 | 2015-02-20 |  |  |
| 313 | Actualizacions en Cerrar fase | 1d | 2015-02-26 A | 2015-02-26 A |  | Antonio |
| 314 | Agregar cerrar face eliminatoria | 1d | 2015-02-26 A | 2015-02-26 A |  | Antonio |
| 315 | Agregar boton para expandir y minimizar fases | 1d | 2015-03-10 A | 2015-03-10 A |  | Antonio |
| 316 | **Adaptación a Mobile** | 10d | 2015-03-03 A | 2015-03-12 A |  |  |
| 317 | Index | 1d | 2015-03-03 A | 2015-03-03 A |  | Facu |
| 318 | Menu | 1d | 2015-03-03 A | 2015-03-03 A |  | Facu |
| 319 | Arbitros | 1d | 2015-03-04 A | 2015-03-04 A |  | Facu |
| 320 | Canchas | 1d | 2015-03-04 A | 2015-03-04 A |  | Facu |
| 321 | Ediciones | 1d | 2015-03-06 A | 2015-03-06 A |  | Facu |
| 322 | Equipos | 1d | 2015-03-06 A | 2015-03-06 A |  | Facu |
| 323 | Jugadores | 1d | 2015-03-09 A | 2015-03-09 A |  | Facu |
| 324 | torneos | 1d | 2015-03-09 A | 2015-03-09 A |  | Facu |
| 325 | Modificar Usuario | 1d | 2015-03-09 A | 2015-03-09 A |  | Facu |
| 326 | Noticias | 1d | 2015-03-09 A | 2015-03-09 A |  | Facu |
| 327 | Sanciones | 1d | 2015-03-09 A | 2015-03-09 A |  | Facu |
| 328 | Fechas | 7d | 2015-03-06 A | 2015-03-12 A |  | Facu |
| 329 | Pagina maestra y estilos css | 10d | 2015-03-03 A | 2015-03-12 A |  | Facu |
| 330 | Realizar casos de prueba | 1d | 2015-03-03 A | 2015-03-03 A |  |  |
| 331 | Correr Casos de prueba | 1d | 2015-03-03 A | 2015-03-03 A |  |  |
| 335 | **Portal de Noticias** | 1d? | 2015-03-13 A | 2015-03-13 |  |  |
| 336 | Rediseñar pantallas | 4d | 2015-03-13 A | 2015-03-16 A |  | Florencia |
| 337 | Agregar editor de texto a la noticia | 1d | 2015-03-17 A | 2015-03-17 A |  | Facu |
| 338 | **Tareas de soporte** | 1d? | 2015-03-13 A | 2015-03-13 |  |  |
| 339 | Error en partidos libres | 1d | 2015-03-13 A | 2015-03-13 A |  | Florencia |
| 340 | Bug de modal para finalizar edicion | 1d | 2015-03-31 A | 2015-03-31 A |  | Antonio |
| 341 | **Modulo Estadisticas** | 1d? | 2015-03-13 | 2015-03-13 |  |  |
| 342 | Versus de equipos | 2d | 2015-03-25 A | 2015-03-26 A |  | Paula; Florencia |
| 343 | Estadisticas Equipo | 2d | 2015-03-26 A | 2015-03-27 A |  | Paula; Florencia |
| 344 | Ultimos partidos de un equipo | 2d | 2015-03-26 A | 2015-03-27 A |  | Paula; Florencia |
| 345 | Goleadores de un Equipo | 1d | 2015-03-25 A | 2015-03-25 A |  | Paula; Florencia |
| 346 | Goleadores Edicion | 1d | 2015-03-25 A | 2015-03-25 A |  | Paula; Florencia |
| 347 | Estadisticas jugador | 1d | 2015-04-01 A | 2015-04-01 A |  | Paula; Florencia |
| 350 | Definicions de conjunto de estilos | 15d | 2015-03-13 A | 2015-03-27 A |  | Facu |
| 351 | integrar interfaces al proyecto | 5d | 2015-03-27 A | 2015-03-31 A |  | Facu |
| 353 | Adaptación a mobile | 1d | 2015-03-31 A | 2015-03-31 A |  | Facu |
| 354 | Ficha de Partido | 3d | 2015-03-30 A | 2015-04-01 A |  | Facu |
| 355 | Testing | 1d | 2015-03-13 A | 2015-03-13 A |  | Paula |
| 356 | **Modulo de personalización de estilo y look and feel del torneo** | 1d? | 2015-03-13 | 2015-03-13 |  |  |
| 357 | Defnición de plantilla | 4d | 2015-03-17 A | 2015-03-20 A |  | Antonio |
| 358 | Desarrollo | 12d | 2015-03-20 A | 2015-03-31 A |  | Antonio |
| 359 | Actualización en Base de Datos | 1d | 2015-03-27 A | 2015-03-27 A |  | Antonio |
| 360 | Testing | 1d | 2015-03-31 A | 2015-03-31 A |  | Antonio; Paula |
| 364 | **Investigación URL rewriting** | 13d | 2015-04-08 A | 2015-04-20 A |  | Antonio |
| 365 | implementación de ejemplo | 2d | 2015-04-13 A | 2015-04-14 A |  | Antonio |
| 366 | incorporar en el proyecto | 1d | 2015-04-14 A | 2015-04-14 A |  | Antonio |
| 367 | Definir todas las reglas de URL | 6d | 2015-04-15 A | 2015-04-20 A |  | Antonio |
| 368 | **Modulo de personalización de estilo y look and feel del torneo** | 4d | 2015-04-04 A | 2015-04-07 A |  |  |
| 369 | Definición de formato de la página | 4d | 2015-04-04 A | 2015-04-07 A |  | Facu; Antonio |
| 370 | Configuración de patrones y colores del Header | 4d | 2015-04-04 A | 2015-04-07 A |  | Facu |
| 371 | Creación de los temas | 4d | 2015-04-04 A | 2015-04-07 A |  | Facu |
| 372 | Restringir opciones de configuración al administrador | 4d | 2015-04-04 A | 2015-04-07 A |  | Antonio |
| 373 | Guardar configuración visual del torneo | 1d | 2015-04-04 A | 2015-04-04 A |  | Antonio |
| 374 | **Modulo Torneo - consulta Web** | 1d? | 2015-04-03 A | 2015-04-03 |  |  |
| 375 | **Ficha del Partido** | 1d? | 2015-04-03 A | 2015-04-03 |  |  |
| 376 | Diseño de interfaz | 2d | 2015-04-08 A | 2015-04-09 A |  | Facu |
| 377 | **Desarrollar funcionalidad de pantalla** | 5d | 2015-04-03 A | 2015-04-07 A |  |  |
| 378 | Información partido: resultado, árbitro, cancha, estado | 5d | 2015-04-03 A | 2015-04-07 A |  | Florencia; Paula |
| 379 | Resumen de partido: goles, cambios, tarjetas, sanciones | 5d | 2015-04-03 A | 2015-04-07 A |  | Florencia; Paula |
| 380 | Próximos partidos de un equipo | 5d | 2015-04-03 A | 2015-04-07 A |  | Florencia; Paula |
| 381 | Últimos partidos de un equipo | 5d | 2015-04-03 A | 2015-04-07 A |  | Florencia; Paula |
| 382 | Versus entre equipos | 5d | 2015-04-03 A | 2015-04-07 A |  | Florencia; Paula |
| 383 | Otros partidos de una fecha | 5d | 2015-04-03 A | 2015-04-07 A |  | Florencia; Paula |
| 384 | **Estadisticas Equipo** | 1d? | 2015-04-03 | 2015-04-03 |  |  |
| 385 | Diseño interfaz | 2d | 2015-04-10 A | 2015-04-11 A |  | Facu |
| 386 | **Agregar funcionalidad a pantalla** | 5d | 2015-04-08 A | 2015-04-12 A |  |  |
| 387 | Información de equipos: datos equipos, estadísticas: puntos, goles a favor, goles en contra, partidos jugados | 5d | 2015-04-08 A | 2015-04-12 A |  | Florencia; Paula |
| 388 | Información de equipos: jugadores de equipo | 5d | 2015-04-08 A | 2015-04-12 A |  | Florencia; Paula |
| 389 | Resumen de equipo: PJ, PG, PE, Goles | 5d | 2015-04-08 A | 2015-04-12 A |  | Florencia; Paula |
| 390 | Últimos partidos de un equipo | 5d | 2015-04-08 A | 2015-04-12 A |  | Florencia; Paula |
| 391 | Historial de partidos de equipos | 5d | 2015-04-08 A | 2015-04-12 A |  | Florencia; Paula |
| 392 | Gráficos | 5d | 2015-04-08 A | 2015-04-12 A |  | Florencia; Paula |
| 393 | **Estadisticas Jugador** | 1d? | 2015-04-03 | 2015-04-03 |  |  |
| 394 | Diseño Interfaz | 3d | 2015-04-13 A | 2015-04-15 A |  | Facu |
| 395 | **Agregar funcionalidad a pantalla** | 5d | 2015-04-16 A | 2015-04-20 A |  |  |
| 396 | Información de jugador: datos jugador, PJ, Goles convertidos, TA, TR | 5d | 2015-04-16 A | 2015-04-20 A |  | Florencia; Paula |
| 397 | Historial de partidos de jugador | 5d | 2015-04-16 A | 2015-04-20 A |  | Florencia; Paula |
| 398 | Jugadores de equipos | 5d | 2015-04-16 A | 2015-04-20 A |  | Florencia; Paula |
| 399 | Gráficos | 5d | 2015-04-16 A | 2015-04-20 A |  | Florencia; Paula |
| 400 | Realizar casos de prueba | 1d? | 2015-04-03 | 2015-04-03 | start no earlier than 2015-04-22 | Paula |
| 401 | Testing | 1d | 2015-04-23 A | 2015-04-23 A |  | Paula |
| 403 | Corrección de los fondos | 4d | 2015-04-20 A | 2015-04-23 A |  | Facu |
| 404 | Estadísticas de Árbitro | 4d | 2015-04-20 A | 2015-04-23 A |  | Paula |
| 405 | Estilos css | 4d | 2015-04-20 A | 2015-04-23 A |  | Facu |
| 406 | Correciones en Themes y bodyClass | 4d | 2015-04-20 A | 2015-04-23 A |  | Facu |
| 407 | Correcciones en Equipos | 4d | 2015-04-20 A | 2015-04-23 A |  | Paula |
| 408 | Actualización del Manual de Usuario | 3d | 2015-04-21 A | 2015-04-23 A |  | Paula |
| 412 | **Módulo Torneo - Consulta Web** | 20d? | 2015-04-24 | 2015-05-13 |  |  |
| 413 | **Goleadores** | 1d? | 2015-04-24 | 2015-04-24 |  |  |
| 414 | Diseño de interfaz | 1d | 2015-04-25 A | 2015-04-25 A |  | Antonio |
| 415 | Agregar métodos y funcionalidad desde el servidor | 1d | 2015-04-26 A | 2015-04-26 A |  | Paula |
| 416 | **Widget Goleadores de la Edición** | 2d | 2015-04-26 A | 2015-04-27 A |  |  |
| 417 | Goleadores de cada Fase de la edición | 2d | 2015-04-26 A | 2015-04-27 A |  | Paula |
| 418 | Cantidad de Goles por Equipo | 2d | 2015-04-26 A | 2015-04-27 A |  | Paula |
| 419 | Cantidad de Goles por Tipo de Gol | 2d | 2015-04-26 A | 2015-04-27 A |  | Paula |
| 420 | Gráficos | 2d | 2015-04-26 A | 2015-04-27 A |  | Paula |
| 421 | **Fechas** | 5d | 2015-04-28 A | 2015-05-02 A |  |  |
| 422 | Diseño de Interfaz | 3d | 2015-04-28 A | 2015-04-30 A |  | Facu |
| 423 | Dar funcionalidad a pantalla | 3d | 2015-04-30 A | 2015-05-02 A |  | Florencia |
| 424 | **Torneos y Ediciones** | 3d | 2015-05-03 A | 2015-05-05 A |  |  |
| 425 | Diseño de Interfaz | 3d | 2015-05-03 A | 2015-05-05 A |  | Antonio |
| 426 | Dar funcionalidad a pantalla | 3d | 2015-05-03 A | 2015-05-05 A |  | Florencia; Paula |
| 427 | **Estadísticas principales de la edición** | 4d | 2015-05-06 A | 2015-05-09 A |  |  |
| 428 | Diseño de Interfaz | 4d | 2015-05-06 A | 2015-05-09 A |  | Facu |
| 429 | Dar funcionalidad a pantalla | 4d | 2015-05-06 A | 2015-05-09 A |  | Florencia; Paula |
| 430 | **Miscelaneas** | 2d | 2015-05-09 A | 2015-05-10 A |  |  |
| 431 | Diseño de Interfaz | 2d | 2015-05-09 A | 2015-05-10 A |  | Antonio |
| 432 | Valla menos vencida | 2d | 2015-05-09 A | 2015-05-10 A |  | Paula |
| 433 | Ranking Fair Play | 2d | 2015-05-09 A | 2015-05-10 A |  | Paula |
| 434 | Árbitros de la Edición/Torneo | 2d | 2015-05-09 A | 2015-05-10 A |  | Paula |
| 435 | Canchas de la Edición/Torneo | 2d | 2015-05-09 A | 2015-05-10 A |  | Paula |
| 436 | **Modulo de Portal de noticias** | 3d | 2015-05-09 A | 2015-05-11 A |  |  |
| 437 | Diseño interfaz | 3d | 2015-05-09 A | 2015-05-11 A |  | Antonio; Florencia |
| 438 | Desarrollo | 3d | 2015-05-09 A | 2015-05-11 A |  | Florencia; Antonio |
| 439 | Testing | 3d | 2015-05-09 A | 2015-05-11 A |  | Paula |
| 442 | Preparación del script de datos | 4d | 2015-05-09 A | 2015-05-12 A |  | Paula |
| 443 | Despliegue del Sistema | 5d | 2015-05-10 A | 2015-05-14 A |  | Facu |
| 444 | Actualización documentos de producto | 11d | 2015-04-30 A | 2015-05-10 A |  | Florencia; Paula |
| 445 | Actualización del Manual de Usuario | 1d | 2015-05-11 A | 2015-05-11 A |  | Paula |

Removed: 234 Realizar Sprint Review; 250 Realizar Sprint Planning; 251 Analizar y Especificar los requerimientos; 252 Diseñar Solución; 253 Actualizar modelos existentes; 254 Crear nuevos modelos; 255 Desarrollar; 264 Analizar y Especificar los requerimientos; 265 Diseñar Solución; 266 Desarrollar; 267 Testear; 268 Implementar; 269 Gestionar cambios; 270 Realizar seguimiento y control de riesgos; 271 Realizar Sprint Review; 275 Analizar y Especificar los requerimientos; 279 Implementar; 280 Gestionar cambios; 281 Realizar seguimiento y control de riesgos; 282 Realizar Sprint Review; 286 Analizar y Especificar los requerimientos; 288 Desarrollar; 289 Testear; 290 Implementar; 291 Gestionar cambios; 292 Realizar seguimiento y control de riesgos; 293 Realizar Sprint Review; 299 Desarrollar; 300 Testear; 301 Implementar; 302 Gestionar cambios; 304 Realizar Sprint Review; 306 Sprint 15; 307 Realizar Presentación Final; 308 Preparar presentación; 309 Elaborar presentación; 310 Exponer

Changed:

| ID | Task | Start | Finish | Duration | Complete | Total float | Predecessors | Other |
| --- | --- | --- | --- | --- | --- | --- | --- | --- |
| 1 | **Sprint 0** |  |  | 78d → 0d |  |  |  |  |
| 2 | **Realizar Propuesta Inicial** |  |  | 22d → 0d |  |  |  |  |
| 6 | Preparar presentación |  |  |  |  |  | 3, 4, 5 → 3FS+95.57d, 4FS+95.57d, 5FS+95.57d |  |
| 10 | Correccion WBS |  |  | 2d → 0d |  |  | 9 → 9FS+95.57d |  |
| 11 | Armar calendario |  |  |  |  |  | 10 → 10FS+95.57d |  |
| 12 | **Realizar Estudio Inicial** |  |  | 32d → 0d? |  |  | 2 → 2FS+95.57d |  |
| 13 | Analizar la problematica y su contexto |  |  | 14d → 0d |  |  |  |  |
| 14 | Analizar soluciones existentes en el mercado |  |  | 2d → 0d |  |  |  |  |
| 15 | Definir alcances |  |  | 7d → 0d |  |  |  |  |
| 17 | Realizar Encuestas |  |  | 10d → 0d |  |  |  |  |
| 22 | Realizar plan mitigación |  |  |  |  |  | 21 → 21FS+95.57d |  |
| 23 | Realizar plan de contingencia |  |  |  |  |  | 21 → 21FS+95.57d |  |
| 24 | **Realizar Plan de Métricas** |  |  | 7d → 0d |  |  |  |  |
| 28 | Definir tipos de pruebas |  |  | 7d → 0d |  |  |  |  |
| 29 | Definir estrategia de prueba |  |  | 7d → 0d |  |  |  |  |
| 30 | Definir nivel de cobertura |  |  | 7d → 0d |  |  |  |  |
| 33 | **Realizar Presentación de Estudio Inicial** |  |  |  |  |  | 12 → 12FS+95.57d |  |
| 34 | Preparar presentación |  |  | 3d → 0d |  |  |  |  |
| 35 | Elaborar presentación |  |  | 3d → 0d |  |  | 34 → 34FS+95.57d |  |
| 36 | Exponer |  |  | 1d → 0d |  |  |  |  |
| 37 | **Preparar Product Backlog** |  |  |  |  |  | 33, 32, 27, 24 → 33FS+95.57d, 32FS+95.57d, 27FS+95.57d, 24FS+95.57d |  |
| 38 | Identificar historias de usuario |  |  | 4d → 0d |  |  |  |  |
| 39 | Priorizar historias de usuario |  |  | 4d → 0d |  |  |  |  |
| 40 | Estimar historias de usuario |  |  | 4d → 0d |  |  |  |  |
| 41 | **Realizar ERS** |  |  | 3d → 0d |  |  | 33, 32, 27, 24 → 33FS+95.57d, 32FS+95.57d, 27FS+95.57d, 24FS+95.57d |  |
| 42 | Entrevistar expertos en dominio |  |  | 3d → 0d |  |  |  |  |
| 43 | Identificar funcionalidades |  |  | 3d → 0d |  |  |  |  |
| 44 | Especificar funcionalidades |  |  | 3d → 0d |  |  |  |  |
| 45 | Definir reglas de negocio |  |  | 3d → 0d |  |  |  |  |
| 46 | **Definir Metodología y Herramientas de Trabajo** |  |  | 1d → 0d |  |  | 41 → 41FS+95.57d |  |
| 47 | Definir y preparar entorno de trabajo |  |  | 1d → 0d |  |  |  |  |
| 48 | Definir ciclo de vida del sw |  |  | 1d → 0d |  |  |  |  |
| 49 | **Sprint 1** |  |  |  |  |  | 1 → 1FS+95.57d |  |
| 64 | **Registrar Usuario** |  | 2014-06-28 A → 2014-06-07 (-21d) | 22d → 1d? |  |  |  |  |
| 78 | Realizar reunión retrospectiva |  |  | 1d → 0d |  |  |  |  |
| 79 | **Sprint 2** |  |  |  |  |  | 78 → 78FS+95.57d |  |
| 87 | **Modificar Campeonato** |  |  | 1d → 1d? |  |  |  |  |
| 89 | **Corrección de Bugs** |  |  | 1d → 1d? |  |  |  |  |
| 91 | **Registrar opciones de Personalización de Edición** |  |  | 1d → 1d? |  |  |  |  |
| 96 | Realizar reunión retrospectiva |  |  | 1d → 0d |  |  |  |  |
| 97 | **Sprint 3** |  |  |  |  |  | 96 → 96FS+95.57d |  |
| 112 | Realizar reunión retrospectiva |  |  | 1d → 0d |  |  |  |  |
| 113 | **Sprint 4** |  |  |  |  |  | 112 → 112FS+95.57d |  |
| 148 | **Modificar Árbitro** |  |  | 1d → 0d? |  |  |  |  |
| 151 | **Eliminar Árbitro** |  |  | 1d → 0d? |  |  |  |  |
| 154 | **Consultar Árbitro** |  |  | 1d → 0d? |  |  |  |  |
| 183 | Testing | 2014-08-10 A → 2014-05-03 (-99d) | 2014-08-10 A → 2014-05-03 (-99d) |  |  |  |  |  |
| 184 | Realizar Sprint Review | 2014-08-30 A → 2014-10-25 (+56d) | 2014-08-30 A → 2014-10-25 (+56d) |  |  |  |  |  |
| 185 | Realizar reunión retrospectiva |  |  | 1d → 0d |  |  |  |  |
| 186 | **Sprint 5** |  |  |  |  |  | 185 → 185FS+95.57d |  |
| 199 | Realizar reunión retrospectiva | 2014-09-20 A → 2014-11-29 (+70d) | 2014-09-20 A → 2014-11-29 (+70d) | 1d → 1d? |  |  |  |  |
| 211 | **Sprint 7** |  | 2014-11-01 A |  | 99% → 100% |  | 210 → 210FS+95.57d |  |
| 231 | Realizar Sprint Review | 2014-10-28 A | 2014-10-28 A |  | 0% → 100% |  |  |  |
| 232 | Realizar reunión retrospectiva | 2014-11-01 A | 2014-11-01 A | 1d → 0d | 0% → 100% | -1d → none |  |  |
| 233 | **Sprint 8** | 2014-11-01 A |  |  | 0% → 100% |  | 232 → 232FS+95.57d |  |
| 247 | Realizar reunión retrospectiva | 2015-03-11 → 2014-11-22 A (-109d) | 2015-03-11 → 2014-11-22 A (-109d) | 1d → 0d | 0% → 100% | -110d → none | 233 → 233FS+95.57d | resources none → Antonio; Facu; Florencia |
| 248 | **Sprint 9** | 2014-11-22 A | 2014-12-13 → 2014-12-17 (+4d) | 22d → 26d | 0% → 92% |  | 247 → 247FS+95.57d |  |
| 249 | **Corrección de Bugs** |  |  |  | 0% → 100% |  |  | was named Realizar Sprint Planning; resources none → Antonio; Facu; Florencia; Paula |
| 250 | Eliminar Edición | 2014-11-22 → 2014-11-25 A (+3d) | 2014-11-22 → 2014-11-28 A (+6d) | 1d → 4d | 0% → 100% |  |  | was named Analizar y Especificar los requerimientos; resources none → Paula |
| 251 | Crear vistas en BD | 2014-11-22 → 2014-11-27 A (+5d) | 2014-11-22 → 2014-11-27 A (+5d) | 1d? → 1d | 0% → 100% |  |  | was named Diseñar Solución; resources none → Paula |
| 252 | Actualización de DAOS | 2014-11-22 → 2014-11-25 A (+3d) | 2014-11-22 → 2014-11-29 A (+7d) | 1d → 5d | 0% → 100% |  |  | was named Actualizar modelos existentes; resources none → Paula |
| 253 | Revisión y corrección de Try y catch en todos los metodos de pantalla | 2014-11-22 → 2014-11-26 A (+4d) | 2014-11-22 → 2014-11-26 A (+4d) |  | 0% → 100% |  |  | was named Crear nuevos modelos; resources none → Florencia |
| 254 | Implementar nuevo filtro para buscadores | 2014-11-22 A | 2014-11-22 A |  | 0% → 100% |  |  | was named Desarrollar; resources none → Facu |
| 255 | Correcciónes en generación d e fases | 2014-11-22 → 2014-12-01 A (+9d) | 2014-11-22 → 2014-12-11 A (+19d) | 1d → 11d | 0% → 100% |  |  | was named Testear; resources none → Antonio; Florencia |
| 256 | Actualización en pantalla ediciones | 2014-11-22 → 2014-12-01 A (+9d) | 2014-11-22 → 2014-12-09 A (+17d) | 1d → 9d | 0% → 100% |  |  | was named Implementar; resources none → Facu |
| 257 | Administrar Sanciones a equipo y/o jugador | 2014-11-22 → 2014-11-25 A (+3d) | 2014-11-22 → 2014-12-17 (+25d) | 1d → 23d | 0% → 74% |  |  | was named Gestionar cambios; resources none → Paula |
| 258 | Generar e implementar gestor de errores | 2014-11-22 → 2014-12-09 A (+17d) | 2014-11-22 → 2014-12-15 A (+23d) | 1d → 7d | 0% → 100% |  |  | was named Realizar seguimiento y control de riesgos; resources none → Facu; Paula |
| 259 | Elegir equipos que pasan a la siguiente fase | 2014-11-22 → 2014-11-26 A (+4d) | 2014-11-22 → 2014-12-11 A (+19d) | 1d → 16d | 0% → 100% |  |  | was named Realizar Sprint Review; resources none → Florencia |
| 260 | Realizar reunión retrospectiva | 2014-05-03 → 2014-11-22 (+203d) | 2014-05-03 → 2014-11-22 (+203d) |  | 0% → 100% | 223d → none |  | resources none → Antonio; Facu; Florencia; Paula |
| 261 | **Sprint 10** | 2014-12-13 → 2015-01-26 A (+44d) | 2015-01-03 → 2015-02-20 A (+48d) | 22d → 26d | 0% → 100% |  | 260 → 260FS+95.57d |  |

| ID | Task | Start | Finish | Duration | Complete | Total float | Predecessors | Other |
| --- | --- | --- | --- | --- | --- | --- | --- | --- |
| 262 | **Corrección de Bugs** | 2014-12-13 → 2015-01-26 A (+44d) | 2014-12-13 → 2015-01-30 A (+48d) | 1d → 5d | 0% → 100% |  |  | was named Testear |
| 263 | errores con el gestorErrores | 2014-12-13 → 2015-01-26 A (+44d) | 2014-12-13 → 2015-01-30 A (+48d) | 1d → 5d | 0% → 100% |  |  | was named Implementar; resources none → Facu |
| 264 | Correccion de cambios de estados | 2014-12-13 → 2015-01-26 A (+44d) | 2014-12-13 → 2015-01-30 A (+48d) | 1d → 5d | 0% → 100% |  |  | was named Gestionar cambios; resources none → Florencia |
| 268 | bug al configurar nueva edicion | 2014-12-13 → 2015-01-26 A (+44d) | 2014-12-13 → 2015-01-30 A (+48d) | 1d → 5d | 0% → 100% |  |  | was named Realizar seguimiento y control de riesgos; resources none → Antonio |
| 269 | Modificación de sanciones | 2014-12-13 → 2015-01-26 A (+44d) | 2014-12-13 → 2015-01-30 A (+48d) | 1d → 5d | 0% → 100% |  |  | was named Realizar Sprint Review; resources none → Paula |
| 286 | Realizar reunión retrospectiva | 2015-01-03 → 2014-05-03 (-245d) | 2015-01-03 → 2014-05-03 (-245d) |  | 0% → 100% | -1d → none |  | constraint start no earlier than 2015-01-03 → start no earlier than 2015-02-20; resources none → Antonio; Facu; Florencia; Paula |
| 287 | **Sprint 11** | 2015-01-03 → 2015-02-20 A (+48d) | 2015-01-24 → 2015-03-12 A (+47d) | 22d → 21d | 0% → 100% |  | 286 → 286FS+95.57d |  |
| 288 | Realizar Sprint Planning | 2015-01-03 → 2015-02-20 A (+48d) | 2015-01-03 → 2015-02-20 A (+48d) |  | 0% → 100% |  |  | resources none → Antonio; Facu; Florencia; Paula |
| 332 | Realizar reunión retrospectiva | 2015-01-24 → 2015-02-20 A (+27d) | 2015-01-24 → 2015-02-20 A (+27d) |  | 0% → 100% |  |  |  |
| 333 | **Sprint 12** | 2015-01-24 → 2015-03-13 (+48d) | 2015-02-13 → 2015-04-02 (+48d) |  | 0% → 100% |  | 332 → 332FS+95.57d |  |
| 334 | Realizar Sprint Planning | 2015-01-24 → 2015-03-12 A (+47d) | 2015-01-24 → 2015-03-12 A (+47d) |  | 0% → 100% |  |  | resources none → Antonio; Facu; Florencia; Paula |
| 348 | **Modulo de Consulta WEB** | 2015-01-24 → 2015-03-13 A (+48d) | 2015-01-24 → 2015-03-31 (+66d) | 1d → 19d | 0% → 100% |  |  | was named Diseñar Solución |
| 349 | Diseño de interfaces | 2015-01-24 → 2015-03-13 A (+48d) | 2015-01-24 → 2015-03-27 A (+62d) | 1d → 15d | 0% → 100% |  |  | was named Desarrollar; resources none → Facu |
| 352 | Desarrollar funcionalidad por cada pantalla | 2015-01-24 → 2015-03-20 A (+55d) | 2015-01-24 → 2015-03-31 A (+66d) | 1d → 12d | 0% → 100% |  |  | was named Testear; resources none → Florencia |
| 361 | Realizar reunión retrospectiva | 2015-02-15 → 2015-04-01 A (+45d) | 2015-02-15 → 2015-04-01 A (+45d) |  | 0% → 100% |  |  | resources none → Antonio; Facu; Florencia; Paula |
| 362 | **Sprint 13** | 2015-02-15 → 2015-04-03 A (+47d) | 2015-03-07 → 2015-04-23 A (+47d) |  | 0% → 100% |  | 361 → 361FS+95.57d |  |
| 363 | Realizar Sprint Planning | 2015-02-15 → 2015-04-07 A (+51d) | 2015-02-15 → 2015-04-07 A (+51d) |  | 0% → 100% |  |  | resources none → Antonio; Facu; Florencia; Paula |
| 402 | **Correción de bugs** | 2015-02-15 → 2015-04-20 A (+64d) | 2015-02-15 → 2015-04-23 A (+67d) | 1d → 4d | 0% → 100% |  |  | was named Diseñar Solución |
| 409 | Realizar reunión retrospectiva | 2015-03-07 → 2015-04-23 A (+47d) | 2015-03-07 → 2015-04-23 A (+47d) |  | 0% → 100% |  |  | resources none → Antonio; Facu; Florencia; Paula |
| 410 | **Sprint 14** | 2015-03-07 → 2015-04-24 A (+48d) | 2015-03-28 → 2015-05-14 A (+47d) | 22d → 21d | 0% → 100% |  | 409 → 409FS+95.57d |  |
| 411 | Realizar Sprint Planning | 2015-03-07 → 2015-04-24 A (+48d) | 2015-03-07 → 2015-04-24 A (+48d) |  | 0% → 100% |  |  | resources none → Antonio; Facu; Florencia; Paula |
| 440 | Testing Prueba de funcionalidad completa | 2015-03-07 → 2015-05-11 A (+65d) | 2015-03-07 → 2015-05-11 A (+65d) |  | 0% → 100% |  |  | was named Analizar y Especificar los requerimientos; resources none → Antonio; Facu; Florencia; Paula |
| 441 | Correción de bugs | 2015-03-07 → 2015-05-12 A (+66d) | 2015-03-07 → 2015-05-13 A (+67d) | 1d → 2d | 0% → 100% |  |  | was named Diseñar Solución; resources none → Antonio; Facu; Florencia; Paula |
| 446 | Realizar reunión retrospectiva | 2015-03-28 → 2015-05-15 A (+48d) | 2015-03-28 → 2015-05-15 A (+48d) |  | 0% → 100% |  |  | resources none → Antonio; Facu; Florencia; Paula |
| 447 | Preparación de Presentación Final | 2015-03-07 → 2015-05-15 A (+69d) | 2015-03-07 → 2015-05-25 A (+79d) | 1d → 11d | 0% → 100% |  |  | was named Realizar seguimiento y control de riesgos; resources none → Antonio; Facu; Florencia; Paula |

## Version 8 (saved 2015-06-10)

Note of the change: planificacion actualizada

Last finish stays 2015-05-25.

Changed:

| ID | Task | Start | Finish | Other |
| --- | --- | --- | --- | --- |
| 117 | **Registrar Cancha** |  | 2014-08-30 A | resources none → Paula |
| 118 | Desarrollo |  |  | resources none → Paula |
| 119 | Testing |  |  | resources none → Paula |
| 120 | **Modificar Cancha** |  | 2014-08-30 A | resources none → Paula |
| 121 | Desarrollo |  |  | resources none → Paula |
| 122 | Testing |  |  | resources none → Paula |
| 123 | **Eliminar Cancha** |  | 2014-08-30 A | resources none → Paula |
| 124 | Desarrollo |  |  | resources none → Paula |
| 125 | Testing |  |  | resources none → Paula |
| 126 | **Consultar Cancha** |  | 2014-08-30 A | resources none → Paula |
| 127 | Desarrollo |  |  | resources none → Paula |
| 128 | Testing |  |  | resources none → Paula |
| 130 | **Registrar Jugador** |  | 2014-08-29 A | resources none → Paula; Facu |
| 131 | Desarrollo |  |  | resources none → Paula; Facu |
| 132 | Testing |  |  | resources none → Paula; Facu |
| 133 | **Modificar Jugador** |  | 2014-08-29 A | resources none → Paula; Facu |
| 134 | Desarrollo |  |  | resources none → Paula; Facu |
| 135 | Testing |  |  | resources none → Paula; Facu |
| 136 | **Eliminar Jugador** |  | 2014-08-29 A | resources none → Paula; Facu |
| 137 | Desarrollo |  |  | resources none → Paula; Facu |
| 138 | Testing |  |  | resources none → Paula; Facu |
| 139 | Consultar Jugador |  |  | resources none → Paula; Facu |
| 141 | **Eliminar Equipo** |  | 2014-08-30 A | resources none → Paula; Facu |
| 142 | Desarrollo |  |  | resources none → Paula; Facu |
| 143 | Testing |  |  | resources none → Paula; Facu |
| 145 | **Registrar Árbitro** |  | 2014-08-29 A | resources none → Paula |
| 146 | Desarrollo |  |  | resources none → Paula |
| 147 | Testing |  |  | resources none → Paula |
| 148 | **Modificar Árbitro** |  |  | resources none → Paula |
| 149 | Desarrollo |  |  | resources none → Paula |
| 150 | Testing |  |  | resources none → Paula |
| 151 | **Eliminar Árbitro** |  |  | resources none → Paula |
| 152 | Desarrollo |  |  | resources none → Paula |
| 153 | Testing |  |  | resources none → Paula |
| 154 | **Consultar Árbitro** |  |  | resources none → Paula |
| 155 | Desarrollo |  |  | resources none → Paula |
| 156 | Testing |  |  | resources none → Paula |
| 158 | Desarrollo |  |  | resources none → Florencia |
| 159 | Testing |  |  | resources none → Florencia |
| 163 | Testing |  |  | resources none → Florencia |
| 166 | Testing |  |  | resources none → Florencia |
| 169 | Testing |  |  | resources none → Florencia |
| 173 | Testear |  |  | resources none → Florencia |
| 179 | Testing |  |  | resources none → Paula |
| 183 | Testing |  |  | resources none → Paula |
| 330 | Realizar casos de prueba |  |  | resources none → Paula |
| 331 | Correr Casos de prueba |  |  | resources none → Paula |
| 332 | Realizar reunión retrospectiva | 2015-02-20 A → 2015-03-12 A (+20d) | 2015-02-20 A → 2015-03-12 A (+20d) | resources none → Antonio; Facu; Florencia; Paula |
| 361 | Realizar reunión retrospectiva | 2015-04-01 A → 2015-04-02 A (+1d) | 2015-04-01 A → 2015-04-02 A (+1d) |  |
